# Programa de Modernización del AIES (ES-L1173)

How a schedule from MS Project XML changed from version to version. A marks actual dates.

## Version 1 (saved 2026-10-30)

Note of the change: Programar EDT ES-L1173 con duraciones y precedencias académicas para Open Planner Studio

| ID | WBS | Task | Duration | Start | Finish | Predecessors |
| --- | --- | --- | --- | --- | --- | --- |
| 1 | 1 | **1. Obras y adecuaciones** | 1363d | 2027-04-12 | 2031-01-03 |  |
| 2 | 1.1 | **Diseños de las obras aprobados** | 145d | 2027-04-12 | 2027-09-03 |  |
| 3 |  | Diseños de la terminal revisados y aprobados | 90d | 2027-04-12 | 2027-08-13 | 55, 59 |
| 4 |  | Diseños de plataformas y calle Foxtrot revisados y aprobados | 100d | 2027-04-12 | 2027-08-27 | 55, 59 |
| 5 |  | Diseños del estacionamiento y del sistema solar revisados y aprobados | 105d | 2027-04-12 | 2027-09-03 | 55, 59 |
| 6 |  | Diseños del SSEI revisados y aprobados | 70d | 2027-04-12 | 2027-07-16 | 55, 59 |
| 7 | 1.2 | **Terminal de pasajeros ampliada** | 754d | 2028-03-06 | 2030-03-29 |  |
| 8 |  | Estructura y envolvente de la terminal construidas | 330d | 2028-03-06 | 2029-06-08 | 64, 65, 3 |
| 9 |  | Salas de espera, circulación y áreas de apoyo terminadas | 240d | 2028-10-02 | 2029-08-31 | 8SS+150d |
| 10 |  | Instalaciones eléctricas, hidráulicas, climatización y contra incendio recibidas | 250d | 2028-10-16 | 2029-09-28 | 8SS+160d |
| 11 |  | Puentes de abordaje, mobiliario y equipos instalados | 130d | 2029-10-01 | 2030-03-29 | 9, 10 |
| 12 |  | Accesibilidad universal, movilidad del cuidado y criterios de sostenibilidad incorporados | 135d | 2029-02-19 | 2029-08-24 | 9SS+100d |
| 13 | 1.3 | **Plataformas de contacto y remotas** | 775d | 2028-03-06 | 2030-04-19 |  |
| 14 |  | Plataforma de posiciones de contacto construida | 250d | 2028-03-06 | 2029-02-16 | 4, 60, 64, 65 |
| 15 |  | Plataforma de posiciones remotas construida | 220d | 2029-01-15 | 2029-11-16 | 26, 4, 60, 64, 65 |
| 16 |  | Señalización, luces y torres de iluminación de plataforma instaladas | 110d | 2029-11-19 | 2030-04-19 | 14, 15 |
| 17 | 1.4 | **Calle de rodaje Foxtrot** | 404d | 2028-03-06 | 2029-04-13 |  |
| 18 |  | Pavimento y hombros de la calle Foxtrot construidos | 220d | 2028-03-06 | 2029-01-05 | 4, 60, 64, 65 |
| 19 |  | Señalización y balizamiento de la calle Foxtrot instalados | 70d | 2029-01-08 | 2029-04-13 | 18 |
| 20 | 1.5 | **Estacionamiento y energía solar** | 544d | 2028-03-06 | 2029-08-31 |  |
| 21 |  | Edificio de estacionamiento construido | 370d | 2028-03-06 | 2029-08-03 | 5, 64, 65 |
| 22 |  | Sistemas de acceso, tráfico y áreas de alquiler instalados | 140d | 2029-02-19 | 2029-08-31 | 21SS+250d |
| 23 |  | Sistema de generación solar instalado | 160d | 2028-12-04 | 2029-07-13 | 21SS+195d |
| 24 | 1.6 | **SSEI reubicado y en operación** | 313d | 2028-03-06 | 2029-01-12 |  |
| 25 |  | Edificio del SSEI y vías de acceso construidos | 190d | 2028-03-06 | 2028-11-24 | 6, 60, 64, 65 |
| 26 |  | SSEI en funcionamiento en la nueva ubicación | 35d | 2028-11-27 | 2029-01-12 | 25 |
| 27 | 1.7 | **Supervisión, PGAS de obra y recepción** | 1034d | 2028-03-06 | 2031-01-03 |  |
| 28 |  | Supervisión de la terminal y del estacionamiento ejecutada | 580d | 2028-03-06 | 2030-05-24 | 8SS, 21SS |
| 29 |  | Supervisión de plataformas, calle Foxtrot y SSEI ejecutada | 515d | 2028-03-06 | 2030-02-22 | 25SS, 14SS |
| 30 |  | PGAS de construcción implementado | 650d | 2028-03-06 | 2030-08-30 | 8SS, 14SS, 21SS |
| 31 |  | Planos de obra ejecutada y actas de recepción aprobados | 90d | 2030-09-02 | 2031-01-03 | 11, 12, 16, 19, 22, 23, 26, 28, 29, 30 |
| 32 | 2 | **2. Fortalecimiento institucional** | 901d | 2027-10-04 | 2030-03-22 |  |
| 33 |  | Plan estratégico del sistema aeronáutico aprobado | 150d | 2027-10-04 | 2028-04-28 | 66, 55 |
| 34 | 2.2 | **Plan Maestro actualizado y funcionarios capacitados** | 355d | 2028-05-01 | 2029-04-20 |  |
| 35 |  | Plan Maestro Aeroportuario actualizado y aprobado | 210d | 2028-05-01 | 2029-02-16 | 66, 33 |
| 36 |  | Funcionarios capacitados en planificación, gestión y operación | 45d | 2029-02-19 | 2029-04-20 | 35 |
| 37 | 2.3 | **Estrategia y capacitación BIM** | 222d | 2027-10-04 | 2028-05-12 |  |
| 38 |  | Estrategia BIM aprobada | 95d | 2027-10-04 | 2028-02-11 | 66 |
| 39 |  | Personal de ingeniería capacitado en BIM | 65d | 2028-02-14 | 2028-05-12 | 38 |
| 40 |  | Estudio de conectividad terrestre entregado | 160d | 2027-10-04 | 2028-05-12 | 66 |
| 41 |  | Estudio de diversificación de destinos entregado | 160d | 2027-10-04 | 2028-05-12 | 66 |
| 42 | 2.6 | **Auditoría y capacitación EDGE** | 208d | 2029-08-27 | 2030-03-22 |  |
| 43 |  | Auditoría para la certificación EDGE realizada | 100d | 2029-08-27 | 2030-01-11 | 23, 12 |
| 44 |  | Personal capacitado en certificación EDGE | 50d | 2030-01-14 | 2030-03-22 | 43 |
| 45 |  | Estudio de separación de flujos entregado | 160d | 2027-10-04 | 2028-05-12 | 66 |
| 46 |  | Estudio de movilidad interna entregado | 135d | 2027-10-04 | 2028-04-07 | 66 |
| 47 |  | Programa de igualdad e inclusión ejecutado | 150d | 2027-10-04 | 2028-04-28 | 66 |
| 48 | 3 | **3. Administración, evaluación y auditorías** | 1678d | 2026-11-02 | 2031-06-06 |  |
| 49 | 3.1 | **Condiciones de arranque cumplidas** | 152d | 2026-11-02 | 2027-04-02 |  |
| 50 |  | Unidad ejecutora conformada y en funciones | 35d | 2026-11-02 | 2026-12-18 |  |
| 51 |  | Reglamento operativo vigente | 35d | 2026-12-21 | 2027-02-05 | 50 |
| 52 |  | Convenio de transferencia de recursos vigente | 25d | 2027-02-08 | 2027-03-12 | 51 |
| 53 |  | Cuenta especial aperturada | 15d | 2027-03-15 | 2027-04-02 | 52 |
| 54 | 3.2 | **Planes de ejecución aprobados** | 96d | 2027-02-08 | 2027-05-14 |  |
| 55 |  | Plan de ejecución plurianual aprobado | 35d | 2027-02-08 | 2027-03-26 | 50, 51 |
| 56 |  | Planes operativos anuales aprobados | 20d | 2027-03-29 | 2027-04-23 | 55 |
| 57 |  | Plan de adquisiciones aprobado | 35d | 2027-03-29 | 2027-05-14 | 55 |
| 58 | 3.3 | **Condiciones socioambientales y de seguridad operacional** | 1370d | 2027-02-08 | 2030-11-08 |  |
| 59 |  | Sistema de gestión ambiental y social y plan de acción vigentes | 45d | 2027-02-08 | 2027-04-09 | 51 |
| 60 |  | Protocolo de seguridad operacional aprobado por la AAC | 45d | 2027-08-30 | 2027-10-29 | 4, 59 |
| 61 |  | Mecanismo de quejas y reclamos en operación | 20d | 2027-04-12 | 2027-05-07 | 59 |
| 62 |  | Informes de cumplimiento socioambiental presentados | 700d | 2028-03-06 | 2030-11-08 | 8SS, 14SS |
| 63 | 3.4 | **Contratos del programa firmados** | 439d | 2026-12-21 | 2028-03-03 |  |
| 64 |  | Contratos de obras del Componente I firmados | 130d | 2027-09-06 | 2028-03-03 | 3, 4, 5, 6, 57, 53 |
| 65 |  | Contrato de supervisión firmado | 85d | 2027-05-17 | 2027-09-10 | 57, 59 |
| 66 |  | Contratos de consultorías del Componente II firmados | 100d | 2027-05-17 | 2027-10-01 | 57, 53 |
| 67 |  | Contratos de la unidad ejecutora, evaluación y auditoría firmados | 50d | 2026-12-21 | 2027-02-26 | 50 |
| 68 | 3.5 | **Control financiero, evaluación y cierre** | 1286d | 2027-11-29 | 2031-06-06 |  |
| 69 |  | Desembolsos justificados e informes financieros presentados | 850d | 2027-11-29 | 2031-02-28 | 64SS+60d |
| 70 |  | Auditorías externas emitidas | 830d | 2027-12-20 | 2031-02-21 | 64SS+75d |

| ID | Task | Duration | Start | Finish | Predecessors |
| --- | --- | --- | --- | --- | --- |
| 71 | Evaluaciones de medio término y de cierre realizadas | 830d | 2027-11-29 | 2031-01-31 | 64SS+60d |
| 72 | Informe de terminación y cierre administrativo del programa | 70d | 2031-03-03 | 2031-06-06 | 31, 36, 39, 40, 41, 44, 45, 46, 47, 62, 69, 70, 71 |

## Version 2 (saved 2026-10-30)

Note of the change: Ajustar duraciones de tareas resumen a dias habiles en cronograma OPS

Last finish stays 2031-06-06.

Changed:

| ID | Task | Duration |
| --- | --- | --- |
| 1 | **1. Obras y adecuaciones** | 1363d → 975d |
| 2 | **Diseños de las obras aprobados** | 145d → 105d |
| 7 | **Terminal de pasajeros ampliada** | 754d → 540d |
| 13 | **Plataformas de contacto y remotas** | 775d → 555d |
| 17 | **Calle de rodaje Foxtrot** | 404d → 290d |
| 20 | **Estacionamiento y energía solar** | 544d → 390d |
| 24 | **SSEI reubicado y en operación** | 313d → 225d |
| 27 | **Supervisión, PGAS de obra y recepción** | 1034d → 740d |
| 32 | **2. Fortalecimiento institucional** | 901d → 645d |
| 34 | **Plan Maestro actualizado y funcionarios capacitados** | 355d → 255d |
| 37 | **Estrategia y capacitación BIM** | 222d → 160d |
| 42 | **Auditoría y capacitación EDGE** | 208d → 150d |
| 48 | **3. Administración, evaluación y auditorías** | 1678d → 1200d |
| 49 | **Condiciones de arranque cumplidas** | 152d → 110d |
| 54 | **Planes de ejecución aprobados** | 96d → 70d |
| 58 | **Condiciones socioambientales y de seguridad operacional** | 1370d → 980d |
| 63 | **Contratos del programa firmados** | 439d → 315d |
| 68 | **Control financiero, evaluación y cierre** | 1286d → 920d |
