# Programa de Modernización del AIES ES-L1173

How a schedule from MS Project XML changed from version to version. A marks actual dates.

## Version 1 (saved 2026-10-31)

Note of the change: Corregir cronograma, curva S y matriz de adquisiciones del ES-L1173

| ID | WBS | Task | Duration | Start | Finish | Predecessors |
| --- | --- | --- | --- | --- | --- | --- |
| 1 | 1 | **Obras y adecuaciones** | 945d | 2026-04-13 | 2029-11-23 |  |
| 2 | 1.1 | **Diseños de las obras aprobados** | 105d | 2026-04-13 | 2026-09-04 |  |
| 3 |  | Diseños de la terminal revisados y aprobados | 90d | 2026-04-13 | 2026-08-14 | 50 |
| 4 |  | Diseños de plataformas y calle Foxtrot revisados y aprobados | 100d | 2026-04-13 | 2026-08-28 | 50 |
| 5 |  | Diseños del estacionamiento y del sistema solar revisados y aprobados | 105d | 2026-04-13 | 2026-09-04 | 50 |
| 6 |  | Diseños del SSEI revisados y aprobados | 70d | 2026-04-13 | 2026-07-17 | 50 |
| 7 | 1.2 | **Terminal de pasajeros ampliada** | 540d | 2027-06-07 | 2029-06-29 |  |
| 8 |  | Estructura y envolvente de la terminal construidas | 330d | 2027-06-07 | 2028-09-08 | 64, 65, 3, 60 |
| 9 |  | Salas de espera, circulación y áreas de apoyo terminadas | 240d | 2028-01-03 | 2028-12-01 | 8SS+150d |
| 10 |  | Instalaciones eléctricas, hidráulicas, climatización y contra incendio recibidas | 250d | 2028-01-17 | 2028-12-29 | 8SS+160d |
| 11 |  | Puentes de abordaje, mobiliario y equipos instalados | 130d | 2029-01-01 | 2029-06-29 | 9, 10 |
| 12 |  | Accesibilidad universal, movilidad del cuidado y criterios de sostenibilidad incorporados | 135d | 2028-05-22 | 2028-11-24 | 9SS+100d |
| 13 | 1.3 | **Plataformas de contacto y remotas** | 555d | 2027-06-07 | 2029-07-20 |  |
| 14 |  | Plataforma de posiciones de contacto construida | 250d | 2027-06-07 | 2028-05-19 | 4, 60, 64, 65 |
| 15 |  | Plataforma de posiciones remotas construida | 220d | 2028-04-17 | 2029-02-16 | 26, 4, 60, 64, 65 |
| 16 |  | Señalización, luces y torres de iluminación de plataforma instaladas | 110d | 2029-02-19 | 2029-07-20 | 14, 15 |
| 17 | 1.4 | **Calle de rodaje Foxtrot** | 290d | 2027-06-07 | 2028-07-14 |  |
| 18 |  | Pavimento y hombros de la calle Foxtrot construidos | 220d | 2027-06-07 | 2028-04-07 | 4, 60, 64, 65 |
| 19 |  | Señalización y balizamiento de la calle Foxtrot instalados | 70d | 2028-04-10 | 2028-07-14 | 18 |
| 20 | 1.5 | **Estacionamiento y energía solar** | 390d | 2027-06-07 | 2028-12-01 |  |
| 21 |  | Edificio de estacionamiento construido | 370d | 2027-06-07 | 2028-11-03 | 5, 64, 65 |
| 22 |  | Sistemas de acceso, tráfico y áreas de alquiler instalados | 140d | 2028-05-22 | 2028-12-01 | 21SS+250d |
| 23 |  | Sistema de generación solar instalado | 160d | 2028-03-06 | 2028-10-13 | 21SS+195d |
| 24 | 1.6 | **SSEI reubicado y en operación** | 225d | 2027-06-07 | 2028-04-14 |  |
| 25 |  | Edificio del SSEI y vías de acceso construidos | 190d | 2027-06-07 | 2028-02-25 | 6, 60, 64, 65 |
| 26 |  | SSEI en funcionamiento en la nueva ubicación | 35d | 2028-02-28 | 2028-04-14 | 25 |
| 27 | 1.7 | **Supervisión, PGAS de obra y recepción** | 645d | 2027-06-07 | 2029-11-23 |  |
| 28 |  | Supervisión de la terminal y del estacionamiento ejecutada | 540d | 2027-06-07 | 2029-06-29 | 64, 65 |
| 29 |  | Supervisión de plataformas, calle Foxtrot y SSEI ejecutada | 555d | 2027-06-07 | 2029-07-20 | 64, 65 |
| 30 |  | PGAS de construcción implementado | 555d | 2027-06-07 | 2029-07-20 | 64, 65, 59 |
| 31 |  | Planos de obra ejecutada y actas de recepción aprobados | 90d | 2029-07-23 | 2029-11-23 | 8, 11, 12, 16, 19, 21, 22, 23, 26, 28, 29, 30 |
| 32 | 2 | **Fortalecimiento institucional** | 760d | 2026-12-21 | 2029-11-16 |  |
| 33 |  | Plan estratégico del sistema aeronáutico aprobado | 150d | 2026-12-21 | 2027-07-16 | 66, 55 |
| 34 | 2.2 | **Plan Maestro actualizado y funcionarios capacitados** | 255d | 2027-07-19 | 2028-07-07 |  |
| 35 |  | Plan Maestro Aeroportuario actualizado y aprobado | 210d | 2027-07-19 | 2028-05-05 | 66, 33 |
| 36 |  | Funcionarios capacitados en planificación, gestión y operación | 45d | 2028-05-08 | 2028-07-07 | 35 |
| 37 | 2.3 | **Estrategia y capacitación BIM** | 160d | 2026-12-21 | 2027-07-30 |  |
| 38 |  | Estrategia BIM aprobada | 95d | 2026-12-21 | 2027-04-30 | 66 |
| 39 |  | Personal de ingeniería capacitado en BIM | 65d | 2027-05-03 | 2027-07-30 | 38 |
| 40 |  | Estudio de conectividad terrestre entregado | 160d | 2026-12-21 | 2027-07-30 | 66 |
| 41 |  | Estudio de diversificación de destinos entregado | 160d | 2026-12-21 | 2027-07-30 | 66 |
| 42 | 2.6 | **Auditoría y capacitación EDGE** | 100d | 2029-07-02 | 2029-11-16 |  |
| 43 |  | Auditoría para la certificación EDGE realizada | 100d | 2029-07-02 | 2029-11-16 | 11, 12, 21, 23 |
| 44 |  | Personal capacitado en certificación EDGE | 50d | 2029-07-02 | 2029-09-07 | 43SS |
| 45 |  | Estudio de separación de flujos entregado | 160d | 2026-12-21 | 2027-07-30 | 66 |
| 46 |  | Estudio de movilidad interna entregado | 135d | 2026-12-21 | 2027-06-25 | 66 |
| 47 |  | Programa de igualdad e inclusión ejecutado | 150d | 2026-12-21 | 2027-07-16 | 66 |
| 48 | 3 | **Administración, evaluación y auditorías** | 1080d | 2026-02-02 | 2030-03-22 |  |
| 49 | 3.1 | **Condiciones de arranque cumplidas** | 170d | 2026-02-02 | 2026-09-25 |  |
| 50 |  | Unidad ejecutora conformada y en funciones | 50d | 2026-02-02 | 2026-04-10 |  |
| 51 |  | Reglamento operativo vigente | 35d | 2026-06-15 | 2026-07-31 | 59 |
| 52 |  | Convenio de transferencia de recursos vigente | 25d | 2026-08-03 | 2026-09-04 | 51 |
| 53 |  | Cuenta especial aperturada | 15d | 2026-09-07 | 2026-09-25 | 52 |
| 54 | 3.2 | **Planes de ejecución aprobados** | 945d | 2026-04-13 | 2029-11-23 |  |
| 55 |  | Plan de ejecución plurianual aprobado | 35d | 2026-04-13 | 2026-05-29 | 50 |
| 56 |  | Planes operativos anuales aprobados | 910d | 2026-06-01 | 2029-11-23 | 55 |
| 57 |  | Plan de adquisiciones aprobado | 35d | 2026-06-01 | 2026-07-17 | 55 |
| 58 | 3.3 | **Condiciones socioambientales y de seguridad operacional** | 855d | 2026-04-13 | 2029-07-20 |  |
| 59 |  | Sistema de gestión ambiental y social y plan de acción vigentes | 45d | 2026-04-13 | 2026-06-12 | 50 |
| 60 |  | Protocolo de seguridad operacional aprobado por la AAC | 45d | 2026-08-31 | 2026-10-30 | 4, 59 |
| 61 |  | Mecanismo de quejas y reclamos en operación | 810d | 2026-06-15 | 2029-07-20 | 59 |
| 62 |  | Informes de cumplimiento socioambiental presentados | 555d | 2027-06-07 | 2029-07-20 | 64, 65, 59 |
| 63 | 3.4 | **Contratos del programa firmados** | 795d | 2026-04-13 | 2029-04-27 |  |
| 64 |  | Contratos de obras del Componente I firmados | 195d | 2026-09-07 | 2027-06-04 | 3, 4, 5, 6, 57, 51 |
| 65 |  | Contrato de supervisión firmado | 85d | 2026-08-03 | 2026-11-27 | 57, 59, 51 |
| 66 |  | Contratos de consultorías del Componente II firmados | 100d | 2026-08-03 | 2026-12-18 | 57, 51 |
| 67 |  | Contratos de la unidad ejecutora, evaluación y auditoría firmados | 795d | 2026-04-13 | 2029-04-27 | 50 |
| 68 | 3.5 | **Control financiero, evaluación y cierre** | 910d | 2026-09-28 | 2030-03-22 |  |
| 69 |  | Desembolsos justificados e informes financieros presentados | 825d | 2026-09-28 | 2029-11-23 | 53 |
| 70 |  | Auditorías externas emitidas | 825d | 2026-09-28 | 2029-11-23 | 53 |

| ID | WBS | Task | Duration | Start | Finish | Predecessors |
| --- | --- | --- | --- | --- | --- | --- |
| 71 |  | Evaluaciones de medio término y de cierre realizadas | 540d | 2027-06-07 | 2029-06-29 | 64 |
| 72 |  | Informe de terminación y cierre administrativo del programa | 85d | 2029-11-26 | 2030-03-22 | 31, 36, 39, 40, 41, 43, 44, 45, 46, 47, 61, 62, 67 |
| 73 | H | **Hitos del programa** | 1031d | 2026-04-10 | 2030-03-22 |  |
| 74 |  | Unidad Ejecutora conformada | 0d | 2026-04-10 | 2026-04-10 | 50 |
| 75 |  | Condiciones previas al primer desembolso cumplidas (ROP, convenio, cuenta) | 0d | 2026-09-25 | 2026-09-25 | 53 |
| 76 |  | Contratos de obra y de supervisión firmados | 0d | 2027-06-04 | 2027-06-04 | 64, 65 |
| 77 |  | Protocolo de seguridad operacional aprobado por la AAC | 0d | 2026-10-30 | 2026-10-30 | 60 |
| 78 |  | SSEI reubicado y en funcionamiento | 0d | 2028-04-14 | 2028-04-14 | 26 |
| 79 |  | Plataforma de posiciones remotas concluida | 0d | 2029-02-16 | 2029-02-16 | 15 |
| 80 |  | Terminal ampliada concluida y equipada | 0d | 2029-06-29 | 2029-06-29 | 11, 12 |
| 81 |  | Estacionamiento con sistema solar concluido | 0d | 2028-12-01 | 2028-12-01 | 22, 23 |
| 82 |  | Obras recibidas (planos de obra ejecutada y actas aprobados) | 0d | 2029-11-23 | 2029-11-23 | 31 |
| 83 |  | Cierre administrativo del programa | 0d | 2030-03-22 | 2030-03-22 | 72, 56, 69, 70, 71 |

## Version 2 (saved 2026-10-31)

Note of the change: Estimar costos con datos salvadoreños y actualizar curva S y matriz

Last finish stays 2030-03-22.

Changed:

| ID | Task | Finish | Duration |
| --- | --- | --- | --- |
| 63 | **Contratos del programa firmados** | 2029-04-27 → 2029-05-25 (+28d) | 795d → 815d |
| 67 | Contratos de la unidad ejecutora, evaluación y auditoría firmados | 2029-04-27 → 2029-05-25 (+28d) | 795d → 815d |
| 71 | Evaluaciones de medio término y de cierre realizadas | 2029-06-29 → 2029-07-27 (+28d) | 540d → 560d |

## Version 3 (saved 2026-10-31)

Note of the change: Desglosar los paquetes de trabajo en actividades y rehacer el cronograma

Last finish 2030-03-22 → 2030-04-01 (+10d).

Added:

| ID | Task | Duration | Start | Finish | Predecessors | Constraint |
| --- | --- | --- | --- | --- | --- | --- |
| 7 | Aprobar el expediente de diseño de la terminal | 11d | 2026-09-04 | 2026-09-18 | 5, 6, 52, 53 |  |
| 13 | Ajustar los diseños y el presupuesto de plataformas y calle Foxtrot con la firma diseñadora | 26d | 2026-09-11 | 2026-10-16 | 10, 12 |  |
| 17 | Revisar técnicamente el expediente de diseño del estacionamiento (estructura, circulaciones y accesibilidad universal) | 32d | 2026-05-18 | 2026-06-30 | 235 |  |
| 20 | Aprobar el expediente de diseño del estacionamiento | 11d | 2026-07-31 | 2026-08-14 | 19 |  |
| 24 | Validar con el SSEI y la AAC el emplazamiento, los tiempos de respuesta y la continuidad del servicio | 16d | 2026-07-30 | 2026-08-20 | 23 |  |
| 27 | Emitir la no objeción del BID a las especificaciones técnicas y los planos de la licitación del SSEI | 6d | 2026-09-29 | 2026-10-06 | 26 |  |
| 32 | Construir la estructura de concreto de los niveles 1 a 3 de la terminal | 133d | 2027-09-03 | 2028-03-07 | 31SS+40d |  |
| 34 | Instalar las fachadas de vidrio y los cerramientos exteriores de la terminal | 82d | 2028-02-25 | 2028-06-19 | 33SS+30d |  |
| 37 | Aplicar los acabados de pisos y paredes de las seis salas de espera, los pasillos, los locales y el salón VIP | 107d | 2028-05-19 | 2028-10-16 | 34SS+30d, 36SS+50d |  |
| 42 | Instalar la detección y supresión de incendios, la voz y datos y el control de acceso | 72d | 2028-05-11 | 2028-08-18 | 36FF+20d, 40SS+50d |  |
| 48 | Instalar el mobiliario, los escáneres de seguridad y los sistemas de información de vuelo | 37d | 2028-09-29 | 2028-11-20 | 37FF+25d |  |
| 49 | Probar los equipos, capacitar al personal de CEPA y entregar los manuales | 31d | 2029-01-04 | 2029-02-15 | 43, 47, 48 |  |
| 54 | Verificar en obra la ejecución de los recorridos accesibles y de los espacios de movilidad del cuidado | 21d | 2028-10-02 | 2028-10-30 | 36SS+30d, 37FF+10d |  |
| 58 | Movilizar al contratista de plataformas y Foxtrot e instalar el cerramiento y los accesos del lado aire | 31d | 2027-08-11 | 2027-09-22 | 15, 124SS+5d, 134, 280, 314FS+10d, 339, 275 |  |
| 60 | Colar el pavimento de concreto de la fase 1 de la plataforma de contacto y sellar las juntas | 87d | 2027-12-06 | 2028-04-04 | 59 |  |
| 63 | Instalar los ductos y los servicios de apoyo a aeronaves de la plataforma de contacto | 26d | 2028-09-25 | 2028-10-30 | 62FF+5d |  |
| 68 | Colar el pavimento de concreto de 34 cm de la plataforma remota y sellar las juntas | 58d | 2028-05-26 | 2028-08-15 | 66, 67 |  |
| 73 | Pintar la señalización horizontal de las plataformas nuevas | 13d | 2028-11-28 | 2028-12-14 | 62FS+25d, 69 |  |
| 74 | Probar las luces y la señalización de las plataformas nuevas | 11d | 2028-12-15 | 2028-12-29 | 71, 72, 73 |  |
| 75 | Autorizar la puesta en servicio de las plataformas nuevas | 12d | 2029-01-01 | 2029-01-16 | 74 |  |
| 78 | Ejecutar la terracería, la base granular y el drenaje de la calle Foxtrot | 52d | 2028-04-05 | 2028-06-15 | 58, 60 |  |
| 79 | Pavimentar con concreto asfáltico la calle Foxtrot y los hombros | 31d | 2028-06-16 | 2028-07-28 | 78 |  |
| 80 | Construir la intersección de Foxtrot con la calle de rodaje Alfa en ventanas de cierre nocturnas | 32d | 2028-07-14 | 2028-08-28 | 79SS+20d |  |
| 81 | **Señalización y balizamiento de la calle Foxtrot instalados** | 54d | 2028-08-29 | 2028-11-10 |  |  |
| 82 | Instalar los ductos, el cableado y las luces de borde y de los puntos de espera de la calle Foxtrot | 31d | 2028-08-29 | 2028-10-10 | 79SS+10d, 80 |  |
| 83 | Pintar la señalización horizontal de la calle Foxtrot | 10d | 2028-08-29 | 2028-09-11 | 80 |  |
| 84 | Probar el balizamiento y la iluminación de la calle Foxtrot | 11d | 2028-10-11 | 2028-10-25 | 82, 83 |  |
| 85 | Autorizar la puesta en servicio de la calle Foxtrot | 12d | 2028-10-26 | 2028-11-10 | 84 |  |
| 87 | **Edificio de estacionamiento construido** | 296d | 2027-02-16 | 2028-04-04 |  |  |
| 88 | Movilizar al contratista e instalar los cerramientos y las obras provisionales del sitio del estacionamiento | 31d | 2027-02-16 | 2027-03-30 | 21, 119SS+5d, 131, 296FS+10d, 321, 275 |  |
| 89 | Construir la cimentación del edificio de estacionamiento | 72d | 2027-03-31 | 2027-07-08 | 88 |  |
| 90 | Construir la estructura de los niveles 1 y 2 del estacionamiento | 127d | 2027-05-12 | 2027-11-04 | 89SS+30d |  |
| 91 | Construir la estructura del nivel superior, la cubierta y las rampas del estacionamiento | 68d | 2027-09-08 | 2027-12-10 | 90SS+85d |  |
| 92 | Instalar las redes eléctricas, de iluminación, de drenaje y de protección contra incendios del estacionamiento | 111d | 2027-07-30 | 2027-12-31 | 90SS+55d, 91FF+15d |  |
| 93 | Construir los acabados, los ascensores, las rutas accesibles y la señalización vial del estacionamiento | 105d | 2027-11-10 | 2028-04-04 | 91SS+45d, 92FF+15d |  |
| 94 | **Sistemas de acceso, tráfico y áreas de alquiler instalados** | 77d | 2027-11-24 | 2028-03-09 |  |  |
| 95 | Instalar el control de acceso, las barreras, el cobro y la guía de plazas del estacionamiento | 52d | 2027-12-01 | 2028-02-10 | 93SS+15d |  |
| 96 | Habilitar las áreas de alquiler de vehículos y la gestión del tráfico interno | 41d | 2027-11-24 | 2028-01-19 | 93SS+10d |  |
| 97 | Probar los sistemas de acceso y tráfico y capacitar al personal de operación | 20d | 2028-02-11 | 2028-03-09 | 95, 96 |  |
| 98 | **Sistema de generación solar instalado** | 277d | 2027-05-11 | 2028-05-31 |  |  |
| 99 | Tramitar la autorización de interconexión del sistema solar con la red de distribución | 38d | 2027-05-11 | 2027-07-01 | 88SS+60d |  |
| 100 | Instalar las estructuras de soporte y los paneles fotovoltaicos en la cubierta del estacionamiento | 46d | 2028-02-08 | 2028-04-11 | 91SS+50d, 93FF+5d |  |
| 101 | Instalar los inversores, el cableado, los tableros y los medidores del sistema solar | 31d | 2028-03-14 | 2028-04-25 | 100FF+10d |  |
| 102 | Probar y energizar el sistema solar y entregar el estacionamiento con sus manuales | 26d | 2028-04-26 | 2028-05-31 | 93, 97, 99, 101 |  |
| 104 | **Edificio del SSEI y vías de acceso construidos** | 137d | 2027-06-18 | 2027-12-27 |  |  |
| 105 | Movilizar al contratista e instalar los cerramientos y los accesos del sitio del SSEI | 20d | 2027-06-18 | 2027-07-15 | 27, 126SS+5d, 133, 280, 308FS+10d, 333, 275 |  |
| 106 | Construir la cimentación y la estructura del edificio del SSEI | 51d | 2027-07-16 | 2027-09-24 | 105 |  |
| 107 | Construir la cubierta, los cerramientos y las instalaciones del edificio del SSEI | 56d | 2027-08-27 | 2027-11-12 | 106SS+30d |  |
| 108 | Construir las vías de acceso y de salida a la plataforma del SSEI | 41d | 2027-08-13 | 2027-10-08 | 106SS+20d |  |
| 109 | Instalar los acabados, los sistemas de alarma y comunicaciones y probar el edificio del SSEI | 41d | 2027-11-01 | 2027-12-27 | 107FS-10d, 108 |  |
| 110 | **SSEI en funcionamiento en la nueva ubicación** | 123d | 2027-08-27 | 2028-02-15 |  |  |
| 111 | Preparar el plan de traslado y de cobertura del servicio durante el traslado del SSEI | 21d | 2027-08-27 | 2027-09-24 | 107SS |  |
| 112 | Dar la conformidad a la cobertura de protección contra incendios durante el traslado del SSEI | 11d | 2027-09-27 | 2027-10-11 | 111 |  |
| 113 | Equipar el edificio nuevo y trasladar al personal y los vehículos del SSEI | 16d | 2028-01-10 | 2028-01-31 | 112, 141 |  |
| 114 | Realizar las pruebas de tiempo de respuesta y declarar en operación el SSEI nuevo | 11d | 2028-02-01 | 2028-02-15 | 113 |  |
| 116 | **Supervisión de la terminal y del estacionamiento ejecutada** | 647d | 2027-02-04 | 2029-07-27 |  |  |
| 117 | Movilizar a la firma de supervisión de la terminal | 11d | 2027-05-20 | 2027-06-03 | 327 |  |
| 118 | Supervisar la construcción de la terminal | 487d | 2027-06-04 | 2029-04-16 | 117 |  |
| 119 | Movilizar a la firma de supervisión del estacionamiento | 11d | 2027-02-04 | 2027-02-18 | 321 |  |
| 120 | Supervisar la construcción del estacionamiento y del sistema solar | 347d | 2027-02-19 | 2028-06-19 | 119 |  |
| 121 | Presentar el informe final de supervisión de la terminal | 16d | 2029-07-06 | 2029-07-27 | 142 |  |
| 122 | Presentar el informe final de supervisión del estacionamiento | 16d | 2028-08-17 | 2028-09-07 | 143 |  |
| 123 | **Supervisión de plataformas, calle Foxtrot y SSEI ejecutada** | 489d | 2027-06-11 | 2029-04-25 |  |  |
| 124 | Movilizar a la firma de supervisión de plataformas y calle Foxtrot | 11d | 2027-07-29 | 2027-08-12 | 339 |  |
| 125 | Supervisar la construcción de plataformas y de la calle Foxtrot | 386d | 2027-08-13 | 2029-02-02 | 124 |  |
| 126 | Movilizar a la firma de supervisión del SSEI | 9d | 2027-06-11 | 2027-06-23 | 333 |  |
| 127 | Supervisar la construcción del edificio del SSEI | 142d | 2027-06-24 | 2028-01-07 | 126 |  |
| 128 | Presentar el informe final de supervisión de plataformas y calle Foxtrot | 16d | 2029-04-04 | 2029-04-25 | 144 |  |
| 129 | Presentar el informe final de supervisión del SSEI | 13d | 2028-02-22 | 2028-03-09 | 145 |  |
| 130 | **PGAS de construcción implementado** | 594d | 2027-01-28 | 2029-05-08 |  |  |
| 131 | Revisar y aprobar el PGAS de construcción del contratista del estacionamiento | 13d | 2027-01-28 | 2027-02-15 | 273, 296 |  |
| 132 | Revisar y aprobar el PGAS de construcción del contratista de la terminal | 16d | 2027-04-26 | 2027-05-17 | 273, 302 |  |
| 133 | Revisar y aprobar el PGAS de construcción del contratista del SSEI | 9d | 2027-05-28 | 2027-06-09 | 273, 308 |  |
| 134 | Revisar y aprobar el PGAS de construcción del contratista de plataformas y Foxtrot | 13d | 2027-07-23 | 2027-08-10 | 273, 314 |  |
| 135 | Dar seguimiento al cumplimiento del PGAS durante las obras | 565d | 2027-02-16 | 2029-04-16 | 131 |  |
| 136 | Verificar el cierre de las instalaciones temporales y la restauración de los sitios de obra | 16d | 2029-04-17 | 2029-05-08 | 138, 139, 140, 141 |  |
| 137 | **Planos de obra ejecutada y actas de recepción aprobados** | 398d | 2027-12-28 | 2029-07-05 |  |  |
| 138 | Realizar la recepción provisional de la terminal y levantar la lista de pendientes | 21d | 2029-03-19 | 2029-04-16 | 50, 75 |  |
| 139 | Realizar la recepción provisional del estacionamiento y del sistema solar y levantar la lista de pendientes | 13d | 2028-06-01 | 2028-06-19 | 102 |  |
| 140 | Realizar la recepción provisional de las plataformas y de la calle Foxtrot y levantar la lista de pendientes | 13d | 2029-01-17 | 2029-02-02 | 75, 85 |  |
| 141 | Realizar la recepción provisional del edificio del SSEI y levantar la lista de pendientes | 9d | 2027-12-28 | 2028-01-07 | 109 |  |
| 142 | Verificar la subsanación de pendientes, recibir los planos de obra ejecutada y firmar el acta de recepción definitiva de la terminal | 58d | 2029-04-17 | 2029-07-05 | 138 |  |
| 143 | Verificar la subsanación de pendientes, recibir los planos de obra ejecutada y firmar el acta de recepción definitiva del estacionamiento y el sistema solar | 42d | 2028-06-20 | 2028-08-16 | 139 |  |
| 144 | Verificar la subsanación de pendientes, recibir los planos de obra ejecutada y firmar el acta de recepción definitiva de las plataformas y la calle Foxtrot | 42d | 2029-02-05 | 2029-04-03 | 140 |  |
| 145 | Verificar la subsanación de pendientes, recibir los planos de obra ejecutada y firmar el acta de recepción definitiva del edificio del SSEI | 31d | 2028-01-10 | 2028-02-21 | 141 |  |
| 147 | **Plan estratégico del sistema aeronáutico aprobado** | 120d | 2027-05-26 | 2027-11-09 |  |  |
| 148 | Elaborar el plan de trabajo y el informe inicial del plan estratégico | 11d | 2027-05-26 | 2027-06-09 | 348 |  |
| 149 | Elaborar el diagnóstico del sistema aeronáutico, su marco normativo y su infraestructura | 36d | 2027-06-10 | 2027-07-29 | 148 |  |
| 150 | Formular la visión, los lineamientos y el plan de acción y redactar el borrador del plan estratégico | 41d | 2027-07-30 | 2027-09-24 | 149 |  |
| 151 | Revisar el borrador del plan estratégico y consolidar las observaciones de CEPA y del BID | 13d | 2027-09-27 | 2027-10-13 | 150 |  |
| 152 | Incorporar las observaciones y entregar la versión final del plan estratégico | 11d | 2027-10-14 | 2027-10-28 | 151 |  |
| 153 | Aprobar el plan estratégico final y remitirlo al BID | 8d | 2027-10-29 | 2027-11-09 | 152 |  |
| 155 | **Plan Maestro Aeroportuario actualizado y aprobado** | 260d | 2027-05-26 | 2028-05-23 |  |  |
| 156 | Elaborar el plan de trabajo y el informe inicial del Plan Maestro | 15d | 2027-05-26 | 2027-06-15 | 354 |  |
| 157 | Elaborar el inventario, el diagnóstico de instalaciones y el pronóstico de demanda | 77d | 2027-06-16 | 2027-09-30 | 156 |  |
| 158 | Determinar los requerimientos, evaluar alternativas y redactar el borrador del Plan Maestro con su plan de implementación y financiero | 109d | 2027-10-01 | 2028-03-01 | 150, 157 |  |
| 159 | Revisar el borrador del Plan Maestro y consolidar las observaciones de CEPA, la AAC y el BID | 27d | 2028-03-02 | 2028-04-07 | 158 |  |
| 160 | Incorporar las observaciones y las recomendaciones del estudio de conectividad y entregar la versión final del Plan Maestro | 21d | 2028-04-10 | 2028-05-08 | 159, 185 |  |
| 161 | Aprobar el Plan Maestro actualizado y entregarlo al BID | 11d | 2028-05-09 | 2028-05-23 | 153FF+10d, 160 |  |
| 162 | **Funcionarios capacitados en planificación, gestión y operación** | 115d | 2028-03-02 | 2028-08-09 |  |  |
| 163 | Preparar el programa, los materiales y la lista de participantes de la capacitación en planificación, gestión y operación | 21d | 2028-03-02 | 2028-03-30 | 158 |  |
| 164 | Impartir los cursos de planificación, gestión y operación aeroportuaria al menos a 21 funcionarios | 42d | 2028-05-24 | 2028-07-20 | 161, 163 |  |
| 165 | Aplicar las evaluaciones y los talleres de cierre a los participantes | 7d | 2028-07-21 | 2028-07-31 | 164 |  |
| 166 | Certificar a los funcionarios aprobados y registrar el indicador R2.1 | 7d | 2028-08-01 | 2028-08-09 | 165 |  |
| 168 | **Estrategia BIM aprobada** | 88d | 2027-04-05 | 2027-08-04 |  |  |
| 169 | Elaborar el plan de trabajo y el informe inicial de la estrategia BIM | 11d | 2027-04-05 | 2027-04-19 | 359 |  |
| 170 | Diagnosticar la madurez BIM de CEPA, sus procesos de diseño y sus herramientas | 21d | 2027-04-20 | 2027-05-18 | 169 |  |
| 171 | Formular la estrategia BIM (usos, roles, entorno común de datos y requisitos de información) y redactar el borrador | 30d | 2027-05-19 | 2027-06-29 | 170 |  |
| 172 | Revisar el borrador de la estrategia BIM y consolidar las observaciones de CEPA | 11d | 2027-06-30 | 2027-07-14 | 171 |  |
| 173 | Incorporar las observaciones y entregar la versión final de la estrategia BIM | 8d | 2027-07-15 | 2027-07-26 | 172 |  |
| 174 | Aprobar la estrategia BIM final | 7d | 2027-07-27 | 2027-08-04 | 173 |  |
| 175 | **Personal de ingeniería capacitado en BIM** | 65d | 2027-07-27 | 2027-10-25 |  |  |
| 176 | Preparar el programa y los materiales de la capacitación en BIM | 15d | 2027-07-27 | 2027-08-16 | 173 |  |
| 177 | Impartir los cursos de BIM al personal de ingeniería de CEPA | 36d | 2027-08-17 | 2027-10-05 | 174, 176 |  |
| 178 | Evaluar a los participantes en BIM | 7d | 2027-10-06 | 2027-10-14 | 177 |  |
| 179 | Entregar los materiales y el registro de la capacitación en BIM | 7d | 2027-10-15 | 2027-10-25 | 178 |  |
| 180 | **Estudio de conectividad terrestre entregado** | 130d | 2027-05-26 | 2027-11-23 |  |  |
| 181 | Elaborar el plan de trabajo y el informe inicial del estudio de conectividad terrestre | 11d | 2027-05-26 | 2027-06-09 | 365 |  |
| 182 | Diagnosticar el acceso terrestre al AIES con aforos, encuestas y análisis de los modos de transporte | 41d | 2027-06-10 | 2027-08-05 | 181 |  |
| 183 | Evaluar alternativas de acceso hacia San Salvador y los destinos turísticos y redactar el borrador del estudio | 46d | 2027-08-06 | 2027-10-08 | 182 |  |
| 184 | Revisar el borrador del estudio de conectividad y consolidar las observaciones de CEPA | 13d | 2027-10-11 | 2027-10-27 | 183 |  |
| 185 | Incorporar las observaciones y entregar el informe final del estudio de conectividad | 11d | 2027-10-28 | 2027-11-11 | 184 |  |
| 186 | Aprobar el informe final del estudio de conectividad | 8d | 2027-11-12 | 2027-11-23 | 185 |  |
| 187 | **Estudio de diversificación de destinos entregado** | 124d | 2027-04-05 | 2027-09-23 |  |  |
| 188 | Elaborar el plan de trabajo y el informe inicial del estudio de diversificación de destinos | 11d | 2027-04-05 | 2027-04-19 | 370 |  |
| 189 | Diagnosticar el mercado actual del AIES (tráfico, aerolíneas, rutas y zona de influencia) | 35d | 2027-04-20 | 2027-06-07 | 188 |  |
| 190 | Analizar los mercados de origen y destino y las aerolíneas potenciales, priorizarlos y redactar el borrador del estudio | 46d | 2027-06-08 | 2027-08-10 | 189 |  |
| 191 | Revisar el borrador del estudio de diversificación y consolidar las observaciones de CEPA | 13d | 2027-08-11 | 2027-08-27 | 190 |  |
| 192 | Incorporar las observaciones y entregar el informe final del estudio de diversificación | 11d | 2027-08-30 | 2027-09-13 | 191 |  |
| 193 | Aprobar el informe final del estudio de diversificación | 8d | 2027-09-14 | 2027-09-23 | 192 |  |
| 195 | **Auditoría para la certificación EDGE realizada** | 568d | 2027-04-05 | 2029-06-06 |  |  |
| 196 | Registrar los proyectos de terminal y estacionamiento en EDGE y elaborar la autoevaluación | 21d | 2027-04-05 | 2027-05-03 | 8, 21, 375 |  |
| 197 | Realizar la auditoría de diseño y obtener el certificado preliminar EDGE | 36d | 2027-05-04 | 2027-06-22 | 196 |  |
| 198 | Acompañar a CEPA y a los contratistas para conservar las medidas EDGE durante la construcción | 453d | 2027-06-23 | 2029-03-16 | 197 |  |
| 199 | Realizar la auditoría en sitio de las medidas EDGE de la terminal y del estacionamiento terminados | 26d | 2029-03-19 | 2029-04-23 | 50, 102, 198 |  |
| 200 | Atender las observaciones del proveedor de certificación y presentar el informe de auditoría | 26d | 2029-04-24 | 2029-05-29 | 199 |  |
| 201 | Recibir el certificado EDGE final y el informe de auditoría | 6d | 2029-05-30 | 2029-06-06 | 200 |  |
| 202 | **Personal capacitado en certificación EDGE** | 508d | 2027-06-23 | 2029-06-01 |  |  |
| 203 | Preparar el programa y los materiales de la capacitación en EDGE | 11d | 2027-06-23 | 2027-07-07 | 197 |  |
| 204 | Impartir el curso de EDGE al personal previsto | 16d | 2029-04-24 | 2029-05-15 | 199, 203 |  |
| 205 | Evaluar y certificar a los participantes en EDGE | 7d | 2029-05-16 | 2029-05-24 | 204 |  |
| 206 | Entregar el registro de la capacitación en EDGE | 6d | 2029-05-25 | 2029-06-01 | 205 |  |
| 207 | **Estudio de separación de flujos entregado** | 88d | 2027-04-05 | 2027-08-04 |  |  |
| 208 | Elaborar el plan de trabajo y el informe inicial del estudio de separación de flujos | 11d | 2027-04-05 | 2027-04-19 | 380 |  |
| 209 | Diagnosticar los flujos de llegadas y salidas de la terminal antigua mediante levantamiento y observación | 21d | 2027-04-20 | 2027-05-18 | 208 |  |
| 210 | Identificar y priorizar las intervenciones de separación de flujos y redactar el borrador del estudio | 30d | 2027-05-19 | 2027-06-29 | 8, 209 |  |
| 211 | Revisar el borrador del estudio de separación de flujos y consolidar las observaciones de CEPA | 11d | 2027-06-30 | 2027-07-14 | 210 |  |
| 212 | Incorporar las observaciones y entregar el informe final del estudio de separación de flujos | 8d | 2027-07-15 | 2027-07-26 | 211 |  |
| 213 | Aprobar el informe final del estudio de separación de flujos | 7d | 2027-07-27 | 2027-08-04 | 212 |  |
| 214 | **Estudio de movilidad interna entregado** | 103d | 2027-04-05 | 2027-08-25 |  |  |
| 215 | Elaborar el plan de trabajo y el informe inicial del estudio de movilidad interna | 11d | 2027-04-05 | 2027-04-19 | 385 |  |
| 216 | Diagnosticar el tráfico de las vías internas con aforos en horas pico y en el dejar y recoger pasajeros | 30d | 2027-04-20 | 2027-05-31 | 215 |  |
| 217 | Analizar los puntos de conflicto, definir las medidas y redactar el borrador del estudio | 36d | 2027-06-01 | 2027-07-20 | 21, 216 |  |
| 218 | Revisar el borrador del estudio de movilidad interna y consolidar las observaciones de CEPA | 11d | 2027-07-21 | 2027-08-04 | 217 |  |
| 219 | Incorporar las observaciones y entregar el informe final del estudio de movilidad interna | 8d | 2027-08-05 | 2027-08-16 | 218 |  |
| 220 | Aprobar el informe final del estudio de movilidad interna | 7d | 2027-08-17 | 2027-08-25 | 219 |  |
| 221 | **Programa de igualdad e inclusión ejecutado** | 603d | 2027-04-05 | 2029-07-25 |  |  |
| 222 | Elaborar el diagnóstico de necesidades, el programa y los materiales de capacitación en igualdad e inclusión | 30d | 2027-04-05 | 2027-05-14 | 390 |  |
| 223 | Impartir la capacitación a la primera cohorte de 100 funcionarios y evaluarla | 35d | 2027-05-17 | 2027-07-02 | 222 |  |
| 224 | Impartir la capacitación a la segunda cohorte de 100 funcionarios y evaluarla | 35d | 2028-05-15 | 2028-06-30 | 223SS+260d |  |
| 225 | Impartir la capacitación a la tercera cohorte de 100 funcionarios y evaluarla | 35d | 2029-05-14 | 2029-06-29 | 224SS+260d |  |
| 226 | Emitir las constancias de los 300 funcionarios aprobados y entregar el informe final del programa | 11d | 2029-07-02 | 2029-07-16 | 225 |  |
| 227 | Aprobar el informe final y registrar el indicador T2 en el informe semestral | 7d | 2029-07-17 | 2029-07-25 | 226 |  |
| 230 | **Unidad ejecutora conformada y en funciones** | 22d | 2026-04-16 | 2026-05-15 |  |  |
| 231 | Incorporar al Coordinador del Programa, al Coordinador general de obra y al Especialista de planificación y monitoreo | 5d | 2026-04-16 | 2026-04-22 | 396 | start no earlier than 2026-04-16 |
| 232 | Incorporar al Especialista de adquisiciones | 5d | 2026-04-23 | 2026-04-29 | 396 | start no earlier than 2026-04-23 |
| 233 | Incorporar al Especialista técnico, al Especialista financiero y al Especialista socioambiental | 5d | 2026-05-04 | 2026-05-08 | 396 | start no earlier than 2026-05-04 |
| 234 | Registrar las firmas autorizadas del programa ante el BID | 5d | 2026-04-23 | 2026-04-29 | 231 |  |
| 235 | Documentar ante el BID la conformación de la UEP con dedicación exclusiva | 5d | 2026-05-11 | 2026-05-15 | 231, 232, 233, 234 |  |
| 236 | **Reglamento operativo vigente** | 30d | 2026-06-01 | 2026-07-10 |  |  |
| 237 | Ajustar el borrador del ROP acordado con el BID a la estructura de la UEP y a las cifras del PA | 15d | 2026-06-01 | 2026-06-19 | 231, 270 |  |
| 238 | Obtener la no objeción del BID al ROP ajustado | 10d | 2026-06-22 | 2026-07-03 | 237 |  |
| 239 | Aprobar el ROP en CEPA mediante resolución de la autoridad superior | 5d | 2026-07-06 | 2026-07-10 | 238 |  |
| 240 | **Convenio de transferencia de recursos vigente** | 35d | 2026-05-18 | 2026-07-03 |  |  |
| 241 | Redactar el convenio de transferencia de recursos entre la República y CEPA | 20d | 2026-05-18 | 2026-06-12 | 235 |  |
| 242 | Obtener la no objeción del BID al texto del convenio | 5d | 2026-06-15 | 2026-06-19 | 241 |  |
| 243 | Suscribir el convenio y ponerlo en vigencia | 10d | 2026-06-22 | 2026-07-03 | 242 |  |
| 244 | **Cuenta especial aperturada** | 25d | 2026-04-30 | 2026-06-03 |  |  |
| 245 | Solicitar a la Dirección General de Tesorería la apertura de la cuenta especial en el BCR | 10d | 2026-04-30 | 2026-05-13 | 234 |  |
| 246 | Abrir y habilitar la cuenta especial para recibir desembolsos | 10d | 2026-05-14 | 2026-05-27 | 245 |  |
| 247 | Registrar la cuenta especial ante el BID | 5d | 2026-05-28 | 2026-06-03 | 246 |  |
| 249 | **Plan de ejecución plurianual aprobado** | 35d | 2026-04-23 | 2026-06-10 |  |  |
| 250 | Actualizar la EDT, el cronograma y el presupuesto del PEP de noviembre de 2025 con las fechas reales del préstamo | 20d | 2026-04-23 | 2026-05-20 | 231 |  |
| 251 | Integrar al PEP el calendario de adquisiciones, hitos y desembolsos por componente | 10d | 2026-05-21 | 2026-06-03 | 250, 264 |  |
| 252 | Aprobar el PEP en CEPA y presentarlo al BID | 5d | 2026-06-04 | 2026-06-10 | 251 |  |
| 253 | **Planes operativos anuales aprobados** | 808d | 2026-11-02 | 2029-12-05 |  |  |
| 254 | Elaborar el POA 2027 con metas, cronograma físico y financiero y presupuesto por producto | 20d | 2026-11-02 | 2026-11-27 | 252 | start no earlier than 2026-11-02 |
| 255 | Aprobar el POA 2027 en CEPA y presentarlo al BID antes del inicio del año | 5d | 2026-11-30 | 2026-12-04 | 254 |  |
| 256 | Elaborar el POA 2028 con metas, cronograma físico y financiero y presupuesto por producto | 20d | 2027-11-01 | 2027-11-26 | 255 | start no earlier than 2027-11-01 |
| 257 | Aprobar el POA 2028 en CEPA y presentarlo al BID antes del inicio del año | 5d | 2027-11-29 | 2027-12-03 | 256 |  |
| 258 | Elaborar el POA 2029 con metas, cronograma físico y financiero y presupuesto por producto | 20d | 2028-11-01 | 2028-11-28 | 257 | start no earlier than 2028-11-01 |
| 259 | Aprobar el POA 2029 en CEPA y presentarlo al BID antes del inicio del año | 5d | 2028-11-29 | 2028-12-05 | 258 |  |
| 260 | Elaborar el POA 2030 con metas, cronograma físico y financiero y presupuesto por producto | 20d | 2029-11-01 | 2029-11-28 | 259 | start no earlier than 2029-11-01 |
| 261 | Aprobar el POA 2030 en CEPA y presentarlo al BID antes del inicio del año | 5d | 2029-11-29 | 2029-12-05 | 260 |  |
| 262 | **Plan de adquisiciones aprobado** | 908d | 2026-02-02 | 2029-07-25 |  |  |
| 263 | Elaborar el Plan de Adquisiciones inicial 2026-1 con estacionamiento, su supervisión, la UEP y la auditoría del año 1 | 30d | 2026-02-02 | 2026-03-13 |  |  |
| 264 | Obtener la no objeción del BID al Plan de Adquisiciones 2026-1 | 5d | 2026-04-07 | 2026-04-13 | 263 | start no earlier than 2026-04-07 |
| 265 | Actualizar el Plan de Adquisiciones a la versión 2026-2 con terminal, SSEI, plataformas y las tres supervisiones restantes | 20d | 2026-04-14 | 2026-05-11 | 264 |  |
| 266 | Obtener la no objeción del BID al Plan de Adquisiciones 2026-2 | 5d | 2026-07-08 | 2026-07-14 | 265 | start no earlier than 2026-07-08 |
| 267 | Mantener el Plan de Adquisiciones actualizado en el sistema del BID cada vez que cambie un proceso | 791d | 2026-07-15 | 2029-07-25 | 266 |  |
| 269 | **Sistema de gestión ambiental y social y plan de acción vigentes** | 169d | 2026-05-11 | 2026-12-31 |  |  |
| 270 | Revisar el PAAS del 8 de octubre de 2025 y ajustar el SGAS a la organización de la UEP | 15d | 2026-05-11 | 2026-05-29 | 233 |  |
| 271 | Elaborar los procedimientos y formatos del SGAS: selección de obra, reporte de incidentes e informe de cumplimiento | 20d | 2026-06-01 | 2026-06-26 | 270 |  |
| 272 | Obtener la no objeción del BID al SGAS y al PAAS actualizados | 10d | 2026-06-29 | 2026-07-10 | 271 |  |
| 273 | Incorporar el SGAS y el PAAS como anexos del ROP aprobado | 5d | 2026-07-13 | 2026-07-17 | 239, 272 |  |
| 274 | Elaborar el Plan de Gestión del Riesgo de Desastres y Cambio Climático final con los diseños aprobados | 31d | 2026-11-11 | 2026-12-23 | 273, 8, 15, 21, 27 |  |
| 275 | Presentar al BID el Plan de Gestión del Riesgo de Desastres y Cambio Climático final | 6d | 2026-12-24 | 2026-12-31 | 274 |  |
| 276 | **Protocolo de seguridad operacional aprobado por la AAC** | 87d | 2026-11-11 | 2027-03-11 |  |  |
| 277 | Evaluar el riesgo operacional y definir las fases de trabajo del lado aire junto con la operación aeroportuaria | 20d | 2026-11-11 | 2026-12-08 | 15, 273 |  |
| 278 | Elaborar el protocolo de seguridad operacional para obras del lado aire, de uso de contratistas y supervisión | 30d | 2026-12-09 | 2027-01-19 | 277 |  |
| 279 | Presentar el protocolo a la AAC y atender sus observaciones | 15d | 2027-01-20 | 2027-02-09 | 278 |  |
| 280 | Aprobar el protocolo de seguridad operacional de las obras del lado aire | 22d | 2027-02-10 | 2027-03-11 | 279 |  |
| 281 | **Mecanismo de quejas y reclamos en operación** | 695d | 2026-07-20 | 2029-03-16 |  |  |
| 282 | Diseñar el procedimiento del mecanismo de quejas y reclamos: canales, plazos de respuesta y registro de casos | 15d | 2026-07-20 | 2026-08-07 | 273 |  |
| 283 | Instalar y difundir los canales del mecanismo entre trabajadores, usuarios, arrendatarios, aerolíneas y comunidades | 20d | 2026-08-10 | 2026-09-04 | 282 |  |
| 284 | Operar el mecanismo, registrar los casos y dar respuesta durante las obras | 660d | 2026-09-07 | 2029-03-16 | 283 |  |
| 285 | **Informes de cumplimiento socioambiental presentados** | 789d | 2026-07-20 | 2029-07-26 |  |  |
| 286 | Acordar con el BID el formato del informe de cumplimiento ambiental y social semestral | 10d | 2026-07-20 | 2026-07-31 | 273 |  |
| 287 | Presentar los informes semestrales de cumplimiento ambiental y social junto con el informe de progreso | 544d | 2027-02-16 | 2029-03-16 | 88SS, 286 |  |
| 288 | Presentar al BID el informe final ambiental y social del programa | 15d | 2029-07-06 | 2029-07-26 | 287, 142, 143, 144, 145 |  |
| 290 | **Contratos de obras del Componente I firmados** | 283d | 2026-06-23 | 2027-07-22 |  |  |
| 291 | Preparar los documentos de licitación del estacionamiento y el sistema solar | 45d | 2026-06-23 | 2026-08-24 | 21FF, 232, 264 |  |
| 292 | Obtener la no objeción del BID a los documentos de licitación del estacionamiento y el sistema solar | 5d | 2026-08-25 | 2026-08-31 | 273, 291 |  |
| 293 | Publicar el aviso específico de adquisiciones del estacionamiento y el sistema solar y recibir ofertas hasta la apertura | 31d | 2026-09-04 | 2026-10-16 | 239, 292 | start no earlier than 2026-09-04 |
| 294 | Evaluar las ofertas del estacionamiento y el sistema solar y elaborar el informe de evaluación | 29d | 2026-10-19 | 2026-11-26 | 293 |  |
| 295 | Obtener la no objeción del BID a la evaluación y a la recomendación de adjudicación del estacionamiento y el sistema solar | 5d | 2026-11-27 | 2026-12-03 | 294 |  |
| 296 | Adjudicar y firmar el contrato de obra del estacionamiento y el sistema solar | 39d | 2026-12-04 | 2027-01-27 | 295 |  |
| 297 | Preparar los documentos de licitación de la terminal de pasajeros | 45d | 2026-07-28 | 2026-09-28 | 8FF, 232, 266 |  |
| 298 | Obtener la no objeción del BID a los documentos de licitación de la terminal de pasajeros | 5d | 2026-09-29 | 2026-10-05 | 273, 297 |  |
| 299 | Publicar el aviso específico de adquisiciones de la terminal de pasajeros y recibir ofertas hasta la apertura | 32d | 2026-10-08 | 2026-11-20 | 239, 298 | start no earlier than 2026-10-08 |
| 300 | Evaluar las ofertas de la terminal de pasajeros y elaborar el informe de evaluación | 44d | 2026-11-23 | 2027-01-21 | 299 |  |
| 301 | Obtener la no objeción del BID a la evaluación y a la recomendación de adjudicación de la terminal de pasajeros | 5d | 2027-01-22 | 2027-01-28 | 300 |  |
| 302 | Adjudicar y firmar el contrato de obra de la terminal de pasajeros | 61d | 2027-01-29 | 2027-04-23 | 301 |  |
| 303 | Preparar los documentos de licitación del SSEI | 45d | 2026-08-05 | 2026-10-06 | 27FF, 232, 266 |  |
| 304 | Obtener la no objeción del BID a los documentos de licitación del SSEI | 5d | 2026-10-07 | 2026-10-13 | 273, 303 |  |
| 305 | Publicar el aviso específico de adquisiciones del SSEI y recibir ofertas hasta la apertura | 31d | 2027-01-06 | 2027-02-17 | 239, 304 | start no earlier than 2027-01-06 |
| 306 | Evaluar las ofertas del SSEI y elaborar el informe de evaluación | 28d | 2027-02-18 | 2027-03-29 | 305 |  |
| 307 | Obtener la no objeción del BID a la evaluación y a la recomendación de adjudicación del SSEI | 5d | 2027-03-30 | 2027-04-05 | 306 |  |
| 308 | Adjudicar y firmar el contrato de obra del SSEI | 38d | 2027-04-06 | 2027-05-27 | 307 |  |
| 309 | Preparar los documentos de licitación de las plataformas y la calle Foxtrot | 45d | 2026-09-09 | 2026-11-10 | 15FF, 232, 266 |  |
| 310 | Obtener la no objeción del BID a los documentos de licitación de las plataformas y la calle Foxtrot | 5d | 2026-11-11 | 2026-11-17 | 273, 309 |  |
| 311 | Publicar el aviso específico de adquisiciones de las plataformas y la calle Foxtrot y recibir ofertas hasta la apertura | 31d | 2027-03-12 | 2027-04-23 | 239, 310 | start no earlier than 2027-03-12 |
| 312 | Evaluar las ofertas de las plataformas y la calle Foxtrot y elaborar el informe de evaluación | 25d | 2027-04-26 | 2027-05-28 | 311 |  |
| 313 | Obtener la no objeción del BID a la evaluación y a la recomendación de adjudicación de las plataformas y la calle Foxtrot | 5d | 2027-05-31 | 2027-06-04 | 312 |  |
| 314 | Adjudicar y firmar el contrato de obra de las plataformas y la calle Foxtrot | 34d | 2027-06-07 | 2027-07-22 | 313 |  |
| 315 | **Contrato de supervisión firmado** | 321d | 2026-05-06 | 2027-07-28 |  |  |
| 316 | Preparar los términos de referencia, la solicitud de expresiones de interés y la lista corta de la supervisión del estacionamiento y el sistema solar | 17d | 2026-05-06 | 2026-05-28 | 264 | start no earlier than 2026-05-06 |
| 317 | Obtener la no objeción del BID a los términos de referencia y a la lista corta de la supervisión del estacionamiento y el sistema solar | 5d | 2026-05-29 | 2026-06-04 | 316 |  |
| 318 | Invitar a las firmas de la lista corta y recibir las propuestas de la supervisión del estacionamiento y el sistema solar | 40d | 2026-06-05 | 2026-07-30 | 317 |  |
| 319 | Evaluar las propuestas técnicas y económicas y negociar el contrato de la supervisión del estacionamiento y el sistema solar | 124d | 2026-07-31 | 2027-01-20 | 318 |  |
| 320 | Obtener la no objeción del BID al informe de evaluación combinado y al contrato negociado de la supervisión del estacionamiento y el sistema solar | 5d | 2027-01-21 | 2027-01-27 | 319 |  |
| 321 | Firmar el contrato de supervisión del estacionamiento y el sistema solar | 5d | 2027-01-28 | 2027-02-03 | 320 |  |
| 322 | Preparar los términos de referencia, la solicitud de expresiones de interés y la lista corta de la supervisión de la terminal | 49d | 2026-10-13 | 2026-12-18 | 239, 266, 273 | start no earlier than 2026-10-13 |
| 323 | Obtener la no objeción del BID a los términos de referencia y a la lista corta de la supervisión de la terminal | 5d | 2026-12-21 | 2026-12-25 | 322 |  |
| 324 | Invitar a las firmas de la lista corta y recibir las propuestas de la supervisión de la terminal | 30d | 2026-12-28 | 2027-02-05 | 323 |  |
| 325 | Evaluar las propuestas técnicas y económicas y negociar el contrato de la supervisión de la terminal | 60d | 2027-02-08 | 2027-04-30 | 324 |  |
| 326 | Obtener la no objeción del BID al informe de evaluación combinado y al contrato negociado de la supervisión de la terminal | 5d | 2027-05-03 | 2027-05-07 | 325 |  |
| 327 | Firmar el contrato de supervisión de la terminal | 8d | 2027-05-10 | 2027-05-19 | 326 |  |
| 328 | Preparar los términos de referencia, la solicitud de expresiones de interés y la lista corta de la supervisión del SSEI | 47d | 2026-11-11 | 2027-01-14 | 239, 266, 273 | start no earlier than 2026-11-11 |
| 329 | Obtener la no objeción del BID a los términos de referencia y a la lista corta de la supervisión del SSEI | 5d | 2027-01-15 | 2027-01-21 | 328 |  |
| 330 | Invitar a las firmas de la lista corta y recibir las propuestas de la supervisión del SSEI | 30d | 2027-01-22 | 2027-03-04 | 329 |  |
| 331 | Evaluar las propuestas técnicas y económicas y negociar el contrato de la supervisión del SSEI | 57d | 2027-03-05 | 2027-05-24 | 330 |  |
| 332 | Obtener la no objeción del BID al informe de evaluación combinado y al contrato negociado de la supervisión del SSEI | 5d | 2027-05-25 | 2027-05-31 | 331 |  |
| 333 | Firmar el contrato de supervisión del SSEI | 8d | 2027-06-01 | 2027-06-10 | 332 |  |
| 334 | Preparar los términos de referencia, la solicitud de expresiones de interés y la lista corta de la supervisión de las plataformas y la calle Foxtrot | 40d | 2027-01-19 | 2027-03-15 | 239, 266, 273 | start no earlier than 2027-01-19 |
| 335 | Obtener la no objeción del BID a los términos de referencia y a la lista corta de la supervisión de las plataformas y la calle Foxtrot | 5d | 2027-03-16 | 2027-03-22 | 334 |  |
| 336 | Invitar a las firmas de la lista corta y recibir las propuestas de la supervisión de las plataformas y la calle Foxtrot | 30d | 2027-03-23 | 2027-05-03 | 335 |  |
| 337 | Evaluar las propuestas técnicas y económicas y negociar el contrato de la supervisión de las plataformas y la calle Foxtrot | 49d | 2027-05-04 | 2027-07-09 | 336 |  |
| 338 | Obtener la no objeción del BID al informe de evaluación combinado y al contrato negociado de la supervisión de las plataformas y la calle Foxtrot | 5d | 2027-07-12 | 2027-07-16 | 337 |  |
| 339 | Firmar el contrato de supervisión de las plataformas y la calle Foxtrot | 8d | 2027-07-19 | 2027-07-28 | 338 |  |
| 340 | **Contratos de consultorías del Componente II firmados** | 147d | 2026-11-02 | 2027-05-25 |  |  |
| 341 | Incluir las consultorías del Componente II en el Plan de Adquisiciones | 15d | 2026-11-02 | 2026-11-20 | 266 | start no earlier than 2026-11-02 |
| 342 | Obtener la no objeción del BID a la actualización del PA con el Componente II | 5d | 2026-11-23 | 2026-11-27 | 341 |  |
| 343 | Preparar los términos de referencia, la solicitud de expresiones de interés y la lista corta para el plan estratégico del sistema aeronáutico (producto 2.1) | 40d | 2026-11-30 | 2027-01-22 | 239, 342 |  |
| 344 | Obtener la no objeción del BID a los términos de referencia y a la lista corta del plan estratégico del sistema aeronáutico (producto 2.1) | 5d | 2027-01-25 | 2027-01-29 | 343 |  |
| 345 | Invitar a las firmas de la lista corta y recibir las propuestas para el plan estratégico del sistema aeronáutico (producto 2.1) | 30d | 2027-02-01 | 2027-03-12 | 344 |  |
| 346 | Evaluar las propuestas y negociar el contrato para el plan estratégico del sistema aeronáutico (producto 2.1) | 35d | 2027-03-15 | 2027-04-30 | 345 |  |
| 347 | Obtener la no objeción del BID al informe de evaluación y al contrato negociado del plan estratégico del sistema aeronáutico (producto 2.1) | 7d | 2027-05-03 | 2027-05-11 | 346 |  |
| 348 | Firmar el contrato de consultoría para el plan estratégico del sistema aeronáutico (producto 2.1) | 10d | 2027-05-12 | 2027-05-25 | 347 |  |
| 349 | Preparar los términos de referencia, la solicitud de expresiones de interés y la lista corta para la actualización del Plan Maestro y la capacitación (productos 2.2.1 y 2.2.2) | 40d | 2026-11-30 | 2027-01-22 | 239, 342 |  |
| 350 | Obtener la no objeción del BID a los términos de referencia y a la lista corta de la actualización del Plan Maestro y la capacitación (productos 2.2.1 y 2.2.2) | 5d | 2027-01-25 | 2027-01-29 | 349 |  |
| 351 | Invitar a las firmas de la lista corta y recibir las propuestas para la actualización del Plan Maestro y la capacitación (productos 2.2.1 y 2.2.2) | 30d | 2027-02-01 | 2027-03-12 | 350 |  |
| 352 | Evaluar las propuestas y negociar el contrato para la actualización del Plan Maestro y la capacitación (productos 2.2.1 y 2.2.2) | 35d | 2027-03-15 | 2027-04-30 | 351 |  |
| 353 | Obtener la no objeción del BID al informe de evaluación y al contrato negociado de la actualización del Plan Maestro y la capacitación (productos 2.2.1 y 2.2.2) | 7d | 2027-05-03 | 2027-05-11 | 352 |  |
| 354 | Firmar el contrato de consultoría para la actualización del Plan Maestro y la capacitación (productos 2.2.1 y 2.2.2) | 10d | 2027-05-12 | 2027-05-25 | 353 |  |
| 355 | Preparar los términos de referencia y la solicitud de expresiones de interés para la estrategia y capacitación BIM (productos 2.3.1 y 2.3.2) | 20d | 2026-11-30 | 2026-12-25 | 239, 342 |  |
| 356 | Publicar la solicitud de expresiones de interés y conformar la lista corta nacional para la estrategia y capacitación BIM (productos 2.3.1 y 2.3.2) | 20d | 2026-12-28 | 2027-01-22 | 355 |  |
| 357 | Invitar a las firmas de la lista corta y recibir las propuestas para la estrategia y capacitación BIM (productos 2.3.1 y 2.3.2) | 20d | 2027-01-25 | 2027-02-19 | 356 |  |
| 358 | Evaluar las propuestas y negociar el contrato para la estrategia y capacitación BIM (productos 2.3.1 y 2.3.2) | 20d | 2027-02-22 | 2027-03-19 | 357 |  |
| 359 | Adjudicar y firmar el contrato de consultoría para la estrategia y capacitación BIM (productos 2.3.1 y 2.3.2) | 10d | 2027-03-22 | 2027-04-02 | 358 |  |
| 360 | Preparar los términos de referencia, la solicitud de expresiones de interés y la lista corta para el estudio de conectividad terrestre (producto 2.4) | 40d | 2026-11-30 | 2027-01-22 | 239, 342 |  |
| 361 | Obtener la no objeción del BID a los términos de referencia y a la lista corta del estudio de conectividad terrestre (producto 2.4) | 5d | 2027-01-25 | 2027-01-29 | 360 |  |
| 362 | Invitar a las firmas de la lista corta y recibir las propuestas para el estudio de conectividad terrestre (producto 2.4) | 30d | 2027-02-01 | 2027-03-12 | 361 |  |
| 363 | Evaluar las propuestas y negociar el contrato para el estudio de conectividad terrestre (producto 2.4) | 35d | 2027-03-15 | 2027-04-30 | 362 |  |
| 364 | Obtener la no objeción del BID al informe de evaluación y al contrato negociado del estudio de conectividad terrestre (producto 2.4) | 7d | 2027-05-03 | 2027-05-11 | 363 |  |
| 365 | Firmar el contrato de consultoría para el estudio de conectividad terrestre (producto 2.4) | 10d | 2027-05-12 | 2027-05-25 | 364 |  |
| 366 | Preparar los términos de referencia y la solicitud de expresiones de interés para el estudio de diversificación de destinos (producto 2.5) | 20d | 2026-11-30 | 2026-12-25 | 239, 342 |  |
| 367 | Publicar la solicitud de expresiones de interés y conformar la lista corta nacional para el estudio de diversificación de destinos (producto 2.5) | 20d | 2026-12-28 | 2027-01-22 | 366 |  |
| 368 | Invitar a las firmas de la lista corta y recibir las propuestas para el estudio de diversificación de destinos (producto 2.5) | 20d | 2027-01-25 | 2027-02-19 | 367 |  |
| 369 | Evaluar las propuestas y negociar el contrato para el estudio de diversificación de destinos (producto 2.5) | 20d | 2027-02-22 | 2027-03-19 | 368 |  |
| 370 | Adjudicar y firmar el contrato de consultoría para el estudio de diversificación de destinos (producto 2.5) | 10d | 2027-03-22 | 2027-04-02 | 369 |  |
| 371 | Preparar los términos de referencia y la solicitud de expresiones de interés para la auditoría y capacitación para la certificación EDGE (productos 2.6.1 y 2.6.2) | 20d | 2026-11-30 | 2026-12-25 | 239, 342 |  |
| 372 | Publicar la solicitud de expresiones de interés y conformar la lista corta nacional para la auditoría y capacitación para la certificación EDGE (productos 2.6.1 y 2.6.2) | 20d | 2026-12-28 | 2027-01-22 | 371 |  |
| 373 | Invitar a las firmas de la lista corta y recibir las propuestas para la auditoría y capacitación para la certificación EDGE (productos 2.6.1 y 2.6.2) | 20d | 2027-01-25 | 2027-02-19 | 372 |  |
| 374 | Evaluar las propuestas y negociar el contrato para la auditoría y capacitación para la certificación EDGE (productos 2.6.1 y 2.6.2) | 20d | 2027-02-22 | 2027-03-19 | 373 |  |
| 375 | Adjudicar y firmar el contrato de consultoría para la auditoría y capacitación para la certificación EDGE (productos 2.6.1 y 2.6.2) | 10d | 2027-03-22 | 2027-04-02 | 374 |  |
| 376 | Preparar los términos de referencia y la solicitud de expresiones de interés para el estudio de separación de flujos (producto 2.7) | 20d | 2026-11-30 | 2026-12-25 | 239, 342 |  |
| 377 | Publicar la solicitud de expresiones de interés y conformar la lista corta nacional para el estudio de separación de flujos (producto 2.7) | 20d | 2026-12-28 | 2027-01-22 | 376 |  |
| 378 | Invitar a las firmas de la lista corta y recibir las propuestas para el estudio de separación de flujos (producto 2.7) | 20d | 2027-01-25 | 2027-02-19 | 377 |  |
| 379 | Evaluar las propuestas y negociar el contrato para el estudio de separación de flujos (producto 2.7) | 20d | 2027-02-22 | 2027-03-19 | 378 |  |
| 380 | Adjudicar y firmar el contrato de consultoría para el estudio de separación de flujos (producto 2.7) | 10d | 2027-03-22 | 2027-04-02 | 379 |  |
| 381 | Preparar los términos de referencia y la solicitud de expresiones de interés para el estudio de movilidad interna (producto 2.8) | 20d | 2026-11-30 | 2026-12-25 | 239, 342 |  |
| 382 | Publicar la solicitud de expresiones de interés y conformar la lista corta nacional para el estudio de movilidad interna (producto 2.8) | 20d | 2026-12-28 | 2027-01-22 | 381 |  |
| 383 | Invitar a las firmas de la lista corta y recibir las propuestas para el estudio de movilidad interna (producto 2.8) | 20d | 2027-01-25 | 2027-02-19 | 382 |  |
| 384 | Evaluar las propuestas y negociar el contrato para el estudio de movilidad interna (producto 2.8) | 20d | 2027-02-22 | 2027-03-19 | 383 |  |
| 385 | Adjudicar y firmar el contrato de consultoría para el estudio de movilidad interna (producto 2.8) | 10d | 2027-03-22 | 2027-04-02 | 384 |  |
| 386 | Preparar los términos de referencia y la solicitud de expresiones de interés para el programa de igualdad e inclusión (producto 2.9) | 20d | 2026-11-30 | 2026-12-25 | 239, 342 |  |
| 387 | Publicar la solicitud de expresiones de interés y conformar la lista corta nacional para el programa de igualdad e inclusión (producto 2.9) | 20d | 2026-12-28 | 2027-01-22 | 386 |  |
| 388 | Invitar a las firmas de la lista corta y recibir las propuestas para el programa de igualdad e inclusión (producto 2.9) | 20d | 2027-01-25 | 2027-02-19 | 387 |  |
| 389 | Evaluar las propuestas y negociar el contrato para el programa de igualdad e inclusión (producto 2.9) | 20d | 2027-02-22 | 2027-03-19 | 388 |  |
| 390 | Adjudicar y firmar el contrato de consultoría para el programa de igualdad e inclusión (producto 2.9) | 10d | 2027-03-22 | 2027-04-02 | 389 |  |
| 391 | **Contratos de la unidad ejecutora, evaluación y auditoría firmados** | 908d | 2026-02-02 | 2029-07-25 |  |  |
| 392 | Preparar los términos de referencia y la convocatoria de los siete consultores clave de la UEP | 18d | 2026-02-02 | 2026-02-25 |  | start no earlier than 2026-02-02 |
| 393 | Obtener la no objeción del BID a los términos de referencia de los siete consultores clave | 5d | 2026-02-26 | 2026-03-04 | 392 |  |
| 394 | Recibir los currículos, evaluar y seleccionar a los siete consultores clave | 20d | 2026-03-05 | 2026-04-01 | 393 |  |
| 395 | Obtener la no objeción del BID a la selección de los siete consultores clave | 5d | 2026-04-02 | 2026-04-08 | 394 |  |
| 396 | Firmar los contratos de los siete consultores clave de la UEP | 5d | 2026-04-09 | 2026-04-15 | 395 |  |
| 397 | Preparar los términos de referencia y la convocatoria del técnico de apoyo administrativo | 10d | 2026-07-15 | 2026-07-28 | 232, 266 | start no earlier than 2026-07-14 |
| 398 | Obtener la no objeción del BID a los términos de referencia del técnico de apoyo | 5d | 2026-07-29 | 2026-08-04 | 397 |  |
| 399 | Recibir los currículos, evaluar y seleccionar al técnico de apoyo | 20d | 2026-08-05 | 2026-09-01 | 398 |  |
| 400 | Obtener la no objeción del BID a la selección del técnico de apoyo | 5d | 2026-09-02 | 2026-09-08 | 399 |  |
| 401 | Firmar el contrato del técnico de apoyo administrativo | 5d | 2026-09-09 | 2026-09-15 | 400 |  |
| 402 | Preparar los términos de referencia y la lista corta de la auditoría externa año 1 | 5d | 2027-04-01 | 2027-04-07 | 239, 264 | start no earlier than 2027-04-01 |
| 403 | Obtener la no objeción del BID a los términos de referencia de la auditoría año 1 | 5d | 2027-04-08 | 2027-04-14 | 402 |  |
| 404 | Invitar a las firmas, recibir y evaluar las propuestas de la auditoría año 1 por menor costo | 5d | 2027-04-15 | 2027-04-21 | 403 |  |
| 405 | Obtener la no objeción del BID a la recomendación de adjudicación de la auditoría año 1 | 5d | 2027-04-22 | 2027-04-28 | 404 |  |
| 406 | Firmar el contrato de la auditoría externa año 1 | 5d | 2027-04-29 | 2027-05-05 | 405 |  |
| 407 | Preparar los términos de referencia y la lista corta de la auditoría externa año 2 | 30d | 2027-09-13 | 2027-10-22 | 239, 266 | start no earlier than 2027-09-13 |
| 408 | Obtener la no objeción del BID a los términos de referencia de la auditoría año 2 | 5d | 2027-10-25 | 2027-10-29 | 407 |  |
| 409 | Invitar a las firmas, recibir y evaluar las propuestas de la auditoría año 2 por menor costo | 25d | 2027-11-01 | 2027-12-03 | 408 |  |
| 410 | Obtener la no objeción del BID a la recomendación de adjudicación de la auditoría año 2 | 5d | 2027-12-06 | 2027-12-10 | 409 |  |
| 411 | Firmar el contrato de la auditoría externa año 2 | 8d | 2027-12-13 | 2027-12-22 | 410 |  |
| 412 | Preparar los términos de referencia y la lista corta de la auditoría externa año 3 | 30d | 2028-09-12 | 2028-10-23 | 239, 266 | start no earlier than 2028-09-12 |
| 413 | Obtener la no objeción del BID a los términos de referencia de la auditoría año 3 | 5d | 2028-10-24 | 2028-10-30 | 412 |  |
| 414 | Invitar a las firmas, recibir y evaluar las propuestas de la auditoría año 3 por menor costo | 25d | 2028-10-31 | 2028-12-04 | 413 |  |
| 415 | Obtener la no objeción del BID a la recomendación de adjudicación de la auditoría año 3 | 5d | 2028-12-05 | 2028-12-11 | 414 |  |
| 416 | Firmar el contrato de la auditoría externa año 3 | 8d | 2028-12-12 | 2028-12-21 | 415 |  |
| 417 | Preparar los términos de referencia y la lista corta de la auditoría externa año 4 | 30d | 2029-04-16 | 2029-05-25 | 239, 266 | start no earlier than 2029-04-16 |
| 418 | Obtener la no objeción del BID a los términos de referencia de la auditoría año 4 | 5d | 2029-05-28 | 2029-06-01 | 417 |  |
| 419 | Invitar a las firmas, recibir y evaluar las propuestas de la auditoría año 4 por menor costo | 25d | 2029-06-04 | 2029-07-06 | 418 |  |
| 420 | Obtener la no objeción del BID a la recomendación de adjudicación de la auditoría año 4 | 5d | 2029-07-09 | 2029-07-13 | 419 |  |
| 421 | Firmar el contrato de la auditoría externa año 4 | 8d | 2029-07-16 | 2029-07-25 | 420 |  |
| 422 | Preparar los términos de referencia y la solicitud de expresiones de interés de la evaluación de medio término | 17d | 2027-11-08 | 2027-11-30 | 239, 266, 455 |  |
| 423 | Publicar la solicitud de expresiones de interés y conformar la lista corta nacional de la evaluación de medio término | 17d | 2027-12-01 | 2027-12-23 | 422 |  |
| 424 | Invitar a las firmas de la lista corta y recibir las propuestas de la evaluación de medio término | 20d | 2027-12-24 | 2028-01-20 | 423 |  |
| 425 | Evaluar las propuestas y negociar el contrato de la evaluación de medio término | 33d | 2028-01-21 | 2028-03-07 | 424 |  |
| 426 | Adjudicar y firmar el contrato de la evaluación de medio término | 10d | 2028-03-08 | 2028-03-21 | 425 |  |
| 427 | Preparar los términos de referencia y la solicitud de expresiones de interés de la evaluación final | 17d | 2028-12-25 | 2029-01-16 | 239, 266, 50FS-60d |  |
| 428 | Publicar la solicitud de expresiones de interés y conformar la lista corta nacional de la evaluación final | 17d | 2029-01-17 | 2029-02-08 | 427 |  |
| 429 | Invitar a las firmas de la lista corta y recibir las propuestas de la evaluación final | 20d | 2029-02-09 | 2029-03-08 | 428 |  |
| 430 | Evaluar las propuestas y negociar el contrato de la evaluación final | 34d | 2029-03-09 | 2029-04-25 | 429 |  |
| 431 | Adjudicar y firmar el contrato de la evaluación final | 10d | 2029-04-26 | 2029-05-09 | 430 |  |
| 433 | **Desembolsos justificados e informes financieros presentados** | 808d | 2026-07-20 | 2029-08-22 |  |  |
| 434 | Solicitar el primer desembolso por Anticipo de Fondos con las condiciones previas cumplidas | 10d | 2026-07-20 | 2026-07-31 | 235, 239, 243, 247, 273 |  |
| 435 | Elaborar y presentar al BID el informe semestral de progreso del semestre S2 de 2026 con la solicitud de desembolso | 19d | 2027-01-01 | 2027-01-27 | 434 | start no earlier than 2027-01-01 |
| 436 | Elaborar y presentar al BID el informe semestral de progreso del semestre S1 de 2027 con la solicitud de desembolso | 19d | 2027-07-01 | 2027-07-27 | 435 | start no earlier than 2027-07-01 |
| 437 | Elaborar y presentar al BID el informe semestral de progreso del semestre S2 de 2027 con la solicitud de desembolso | 19d | 2028-01-03 | 2028-01-27 | 436 | start no earlier than 2028-01-03 |
| 438 | Elaborar y presentar al BID el informe semestral de progreso del semestre S1 de 2028 con la solicitud de desembolso | 19d | 2028-07-03 | 2028-07-27 | 437 | start no earlier than 2028-07-03 |
| 439 | Elaborar y presentar al BID el informe semestral de progreso del semestre S2 de 2028 con la solicitud de desembolso | 19d | 2029-01-01 | 2029-01-25 | 438 | start no earlier than 2029-01-01 |
| 440 | Elaborar y presentar al BID el informe semestral de progreso del semestre S1 de 2029 con la solicitud de desembolso | 19d | 2029-07-02 | 2029-07-26 | 439 | start no earlier than 2029-07-02 |
| 441 | Justificar los gastos y tramitar las solicitudes de desembolso del año 2027 | 280d | 2027-01-01 | 2028-01-27 | 434 | start no earlier than 2027-01-01 |
| 442 | Justificar los gastos y tramitar las solicitudes de desembolso del año 2028 | 279d | 2028-01-03 | 2029-01-25 | 434 | start no earlier than 2028-01-03 |
| 443 | Justificar los gastos y tramitar las solicitudes de desembolso del año 2029 | 168d | 2029-01-01 | 2029-08-22 | 434 | start no earlier than 2029-01-01 |
| 444 | **Auditorías externas emitidas** | 576d | 2027-01-01 | 2029-03-16 |  |  |
| 445 | Preparar los estados financieros del programa del ejercicio 2026 | 20d | 2027-01-01 | 2027-01-28 | 247 | start no earlier than 2027-01-01 |
| 446 | Auditar los estados financieros del programa del ejercicio 2026 | 30d | 2027-05-06 | 2027-06-16 | 406, 445 |  |
| 447 | Presentar al BID los estados financieros auditados del ejercicio 2026 | 5d | 2027-06-17 | 2027-06-23 | 446 |  |
| 448 | Preparar los estados financieros del programa del ejercicio 2027 | 20d | 2028-01-03 | 2028-01-28 | 447 | start no earlier than 2028-01-03 |
| 449 | Auditar los estados financieros del programa del ejercicio 2027 | 30d | 2028-01-31 | 2028-03-10 | 411, 448 |  |
| 450 | Presentar al BID los estados financieros auditados del ejercicio 2027 | 5d | 2028-03-13 | 2028-03-17 | 449 |  |
| 451 | Preparar los estados financieros del programa del ejercicio 2028 | 20d | 2029-01-01 | 2029-01-26 | 450 | start no earlier than 2029-01-01 |
| 452 | Auditar los estados financieros del programa del ejercicio 2028 | 30d | 2029-01-29 | 2029-03-09 | 416, 451 |  |
| 453 | Presentar al BID los estados financieros auditados del ejercicio 2028 | 5d | 2029-03-12 | 2029-03-16 | 452 |  |
| 454 | **Evaluaciones de medio término y de cierre realizadas** | 534d | 2027-11-01 | 2029-11-15 |  |  |
| 455 | Proyectar en el POA 2028 la fecha del hito de medio término (50% desembolsado o 50% del plazo de desembolsos) | 5d | 2027-11-01 | 2027-11-05 | 256SS |  |
| 456 | Ejecutar la evaluación de medio término: avance físico y financiero y medición temprana de resultados | 85d | 2028-03-22 | 2028-07-18 | 426 |  |
| 457 | Revisar el informe de evaluación de medio término y presentarlo al BID | 10d | 2028-07-19 | 2028-08-01 | 456 |  |
| 458 | Ejecutar la evaluación final de efectividad sin atribución empírica | 126d | 2029-05-10 | 2029-11-01 | 431, 457 |  |
| 459 | Revisar el informe de evaluación final y presentarlo al BID | 10d | 2029-11-02 | 2029-11-15 | 458, 142, 143, 144, 145 |  |
| 460 | **Informe de terminación y cierre administrativo del programa** | 178d | 2029-07-26 | 2030-04-01 |  |  |
| 461 | Liquidar los contratos de obra, supervisión y consultoría | 20d | 2029-07-26 | 2029-08-22 | 153, 161, 166, 174, 179, 186, 193, 201, 206, 213, 220, 227, 142, 143, 144, 145 |  |
| 462 | Justificar los anticipos pendientes y tramitar el último desembolso | 20d | 2029-11-16 | 2029-12-13 | 461, 459 |  |
| 463 | Auditar y presentar al BID los estados financieros finales del programa | 42d | 2029-12-14 | 2030-02-11 | 421, 462, 453 |  |
| 464 | Preparar y entregar al BID los insumos de la UEP para el informe de terminación del programa, con las lecciones aprendidas | 25d | 2030-02-12 | 2030-03-18 | 288, 459, 463, 440 |  |
| 465 | Devolver los saldos no justificados al BID y cerrar la cuenta especial | 15d | 2030-02-12 | 2030-03-04 | 463 |  |
| 466 | Cerrar el expediente administrativo del programa y archivar los documentos | 10d | 2030-03-19 | 2030-04-01 | 464, 465, 118, 120, 121, 122, 125, 127, 128, 129, 135, 136, 261, 267, 284, 401, 441, 442, 443 |  |

Removed: 28 Supervisión de la terminal y del estacionamiento ejecutada; 56 Planes operativos anuales aprobados

Changed:

| ID | Task | Start | Finish | Duration | Predecessors | Other |
| --- | --- | --- | --- | --- | --- | --- |
| 1 | **Obras y adecuaciones** | 2026-04-13 → 2026-05-18 (+35d) | 2029-11-23 → 2029-07-27 (-119d) | 945d → 835d |  |  |
| 2 | **Diseños de las obras aprobados** | 2026-04-13 → 2026-05-18 (+35d) | 2026-09-04 → 2026-11-10 (+67d) | 105d → 127d |  |  |
| 3 | **Diseños de la terminal revisados y aprobados** | 2026-04-13 → 2026-05-18 (+35d) | 2026-08-14 → 2026-09-28 (+45d) | 90d → 96d | 50 → none |  |
| 4 | Revisar técnicamente el expediente de diseño de la terminal (planos, especificaciones y cantidades) | 2026-04-13 → 2026-05-18 (+35d) | 2026-08-28 → 2026-06-29 (-60d) | 100d → 31d | 50 → 235 | was named Diseños de plataformas y calle Foxtrot revisados y aprobados |
| 5 | Ajustar los diseños y el presupuesto de la terminal con la firma diseñadora (FIDS, CUTE, puentes de abordaje y observaciones de la revisión) | 2026-04-13 → 2026-06-30 (+78d) | 2026-09-04 → 2026-08-12 (-23d) | 105d → 32d | 50 → 4 | was named Diseños del estacionamiento y del sistema solar revisados y aprobados |
| 6 | Revisar la coordinación del modelo BIM de la terminal con los planos y las especificaciones | 2026-04-13 → 2026-07-22 (+100d) | 2026-07-17 → 2026-08-12 (+26d) | 70d → 16d | 50 → 4SS+10d, 5FF | was named Diseños del SSEI revisados y aprobados |
| 8 | Emitir la no objeción del BID a las especificaciones técnicas y los planos de la licitación de la terminal | 2027-06-07 → 2026-09-21 (-259d) | 2028-09-08 → 2026-09-28 (-711d) | 330d → 6d | 64, 65, 3, 471 → 7 | was named Estructura y envolvente de la terminal construidas |
| 9 | **Diseños de plataformas y calle Foxtrot revisados y aprobados** | 2028-01-03 → 2026-05-18 (-595d) | 2028-12-01 → 2026-11-10 (-752d) | 240d → 127d | 8SS+150d → none | was named Salas de espera, circulación y áreas de apoyo terminadas |
| 10 | Realizar sondeos geotécnicos en las tres posiciones remotas y verificar el diseño de pavimentos | 2028-01-17 → 2026-05-18 (-609d) | 2028-12-29 → 2026-06-30 (-913d) | 250d → 32d | 8SS+160d → 235 | was named Instalaciones eléctricas, hidráulicas, climatización y contra incendio recibidas |
| 11 | Revisar técnicamente los diseños de plataformas, calle Foxtrot, drenaje y ayudas visuales | 2029-01-01 → 2026-06-30 (-916d) | 2029-06-29 → 2026-08-11 (-1053d) | 130d → 31d | 9, 10 → 4, 235 | was named Puentes de abordaje, mobiliario y equipos instalados |
| 12 | Revisar con la AAC la geometría del lado aire y el plan de fases de las obras | 2028-05-22 → 2026-08-12 (-649d) | 2028-11-24 → 2026-09-10 (-806d) | 135d → 22d | 9SS+100d → 11 | was named Accesibilidad universal, movilidad del cuidado y criterios de sostenibilidad incorporados |
| 14 | Aprobar los diseños de plataformas y calle Foxtrot | 2027-06-07 → 2026-10-19 (-231d) | 2028-05-19 → 2026-11-02 (-564d) | 250d → 11d | 4, 471, 64, 65 → 13 | was named Plataforma de posiciones de contacto construida |
| 15 | Emitir la no objeción del BID a las especificaciones técnicas y los planos de la licitación de plataformas y Foxtrot | 2028-04-17 → 2026-11-03 (-531d) | 2029-02-16 → 2026-11-10 (-829d) | 220d → 6d | 26, 4, 471, 64, 65 → 14 | was named Plataforma de posiciones remotas construida |
| 16 | **Diseños del estacionamiento y del sistema solar revisados y aprobados** | 2029-02-19 → 2026-05-18 (-1008d) | 2029-07-20 → 2026-08-24 (-1061d) | 110d → 71d | 14, 15 → none | was named Señalización, luces y torres de iluminación de plataforma instaladas |
| 18 | Revisar el diseño del sistema fotovoltaico y su conexión eléctrica | 2027-06-07 → 2026-06-01 (-371d) | 2028-04-07 → 2026-06-17 (-660d) | 220d → 13d | 4, 471, 64, 65 → 17SS+10d | was named Pavimento y hombros de la calle Foxtrot construidos |
| 19 | Ajustar los diseños y el presupuesto del estacionamiento con la firma diseñadora | 2028-04-10 → 2026-07-01 (-649d) | 2028-07-14 → 2026-07-30 (-715d) | 70d → 22d | 18 → 17, 18 | was named Señalización y balizamiento de la calle Foxtrot instalados |
| 21 | Emitir la no objeción del BID a las especificaciones técnicas y los planos de la licitación del estacionamiento | 2027-06-07 → 2026-08-17 (-294d) | 2028-11-03 → 2026-08-24 (-802d) | 370d → 6d | 5, 64, 65 → 20 | was named Edificio de estacionamiento construido |
| 22 | **Diseños del SSEI revisados y aprobados** | 2028-05-22 → 2026-07-01 (-691d) | 2028-12-01 → 2026-10-06 (-787d) | 140d → 70d | 21SS+250d → none | was named Sistemas de acceso, tráfico y áreas de alquiler instalados |
| 23 | Revisar técnicamente el diseño del edificio del SSEI y de sus vías de acceso | 2028-03-06 → 2026-07-01 (-614d) | 2028-10-13 → 2026-07-29 (-807d) | 160d → 21d | 21SS+195d → 17, 235 | was named Sistema de generación solar instalado |
| 25 | Ajustar el diseño del SSEI con la firma diseñadora | 2027-06-07 → 2026-08-21 (-290d) | 2028-02-25 → 2026-09-11 (-532d) | 190d → 16d | 6, 471, 64, 65 → 24 | was named Edificio del SSEI y vías de acceso construidos |
| 26 | Aprobar el diseño del SSEI | 2028-02-28 → 2026-09-14 (-532d) | 2028-04-14 → 2026-09-28 (-564d) | 35d → 11d |  | was named SSEI en funcionamiento en la nueva ubicación |
| 28 | **Terminal de pasajeros ampliada** | 2027-06-07 → 2026-08-13 (-298d) | 2029-06-29 → 2029-03-16 (-105d) | 540d → 677d |  |  |
| 29 | **Estructura y envolvente de la terminal construidas** | 2027-06-07 → 2027-05-27 (-11d) | 2029-07-20 → 2028-06-19 (-396d) | 555d → 278d | 64, 65 → none | was named Supervisión de plataformas, calle Foxtrot y SSEI ejecutada |
| 30 | Movilizar al contratista e instalar cerramientos, accesos y obras provisionales con la terminal en operación | 2027-06-07 → 2027-05-27 (-11d) | 2029-07-20 → 2027-07-08 (-743d) | 555d → 31d | 64, 65, 59 → 8, 117SS+5d, 132, 280, 302FS+10d, 327, 275 | was named PGAS de construcción implementado |
| 31 | Ejecutar la demolición, el movimiento de tierra y la cimentación de la terminal | 2029-07-23 → 2027-07-09 (-745d) | 2029-11-23 → 2027-10-26 (-759d) | 90d → 78d | 8, 11, 12, 16, 19, 21, 22, 23, 26, Supervisión de la terminal y del estacionamiento ejecutada, 29, 30 → 30 | was named Planos de obra ejecutada y actas de recepción aprobados |
| 33 | Montar la estructura metálica y la cubierta de la terminal | 2026-12-21 → 2028-01-14 (+389d) | 2027-07-16 → 2028-05-01 (+290d) | 150d → 77d | 66, 55 → 32SS+95d | was named Plan estratégico del sistema aeronáutico aprobado |
| 35 | **Salas de espera, circulación y áreas de apoyo terminadas** | 2027-07-19 → 2028-03-10 (+235d) | 2028-05-05 → 2028-10-23 (+171d) | 210d → 162d | 66, 33 → none | was named Plan Maestro Aeroportuario actualizado y aprobado |
| 36 | Construir las divisiones, la mampostería liviana y los cielos de los tres niveles | 2028-05-08 → 2028-03-10 (-59d) | 2028-07-07 → 2028-07-21 (+14d) | 45d → 96d | 35 → 33SS+40d | was named Funcionarios capacitados en planificación, gestión y operación |
| 38 | Integrar la ampliación con la terminal de la Etapa 1 y habilitar las circulaciones de pasajeros | 2026-12-21 → 2028-08-21 (+609d) | 2027-04-30 → 2028-10-23 (+542d) | 95d → 46d | 66 → 37FF+5d | was named Estrategia BIM aprobada |
| 39 | **Instalaciones eléctricas, hidráulicas, climatización y contra incendio recibidas** | 2027-05-03 → 2028-02-25 (+298d) | 2027-07-30 → 2028-11-20 (+479d) | 65d → 192d | 38 → none | was named Personal de ingeniería capacitado en BIM |
| 40 | Instalar las redes eléctricas, de agua, de drenaje y los ductos de climatización por nivel | 2026-12-21 → 2028-02-25 (+431d) | 2027-07-30 → 2028-08-04 (+371d) | 160d → 116d | 66 → 32SS+60d, 36FF+10d | was named Estudio de conectividad terrestre entregado |
| 41 | Instalar la subestación, los tableros, la planta de emergencia y los equipos de climatización | 2026-12-21 → 2028-05-02 (+498d) | 2027-07-30 → 2028-08-17 (+384d) | 160d → 78d | 66 → 33, 40SS+40d | was named Estudio de diversificación de destinos entregado |
| 43 | Realizar las pruebas, el balanceo y la puesta en marcha de las instalaciones de la terminal | 2029-07-02 → 2028-09-08 (-297d) | 2029-11-16 → 2028-11-20 (-361d) | 100d → 52d | 11, 12, 21, 23 → 37SS+80d, 41, 42 | was named Auditoría para la certificación EDGE realizada |
| 44 | **Puentes de abordaje, mobiliario y equipos instalados** | 2029-07-02 → 2027-08-20 (-682d) | 2029-09-07 → 2029-03-16 (-175d) | 50d → 411d | 43SS → none | was named Personal capacitado en certificación EDGE |
| 45 | Elaborar y aprobar los planos de taller de los seis puentes de abordaje | 2026-12-21 → 2027-08-20 (+242d) | 2027-07-30 → 2027-10-18 (+80d) | 160d → 42d | 66 → 30FS+30d | was named Estudio de separación de flujos entregado |
| 46 | Fabricar y entregar en sitio los seis puentes de abordaje | 2026-12-21 → 2027-10-19 (+302d) | 2027-06-25 → 2028-04-19 (+299d) | 135d → 132d | 66 → 45 | was named Estudio de movilidad interna entregado |
| 47 | Instalar y conectar los seis puentes de abordaje a la terminal y a la plataforma | 2026-12-21 → 2028-10-24 (+673d) | 2027-07-16 → 2029-01-03 (+537d) | 150d → 52d | 66 → 34, 46, 62 | was named Programa de igualdad e inclusión ejecutado |
| 50 | Realizar las pruebas integradas de operación de la terminal con las aerolíneas y las autoridades | 2026-02-02 → 2029-02-16 (+1110d) | 2026-04-10 → 2029-03-16 (+1071d) | 50d → 21d | none → 38, 49, 54, 55, 63 | was named Unidad ejecutora conformada y en funciones |
| 51 | **Accesibilidad universal, movilidad del cuidado y criterios de sostenibilidad incorporados** | 2026-06-15 → 2026-08-13 (+59d) | 2026-07-31 → 2028-11-27 (+850d) | 35d → 598d | 59 → none | was named Reglamento operativo vigente |
| 52 | Verificar en los planos aprobados los recorridos de accesibilidad universal y de movilidad del cuidado | 2026-08-03 → 2026-08-13 (+10d) | 2026-09-04 → 2026-09-03 (-1d) | 25d → 16d | 51 → 5 | was named Convenio de transferencia de recursos vigente |
| 53 | Verificar en el diseño aprobado las metas EDGE Advanced de energía, agua y carbono incorporado | 2026-09-07 → 2026-08-13 (-25d) | 2026-09-25 → 2026-09-03 (-22d) | 15d → 16d | 52 → 5 | was named Cuenta especial aperturada |
| 55 | Verificar en obra las medidas de eficiencia y reunir las evidencias para la auditoría EDGE | 2026-04-13 → 2028-11-01 (+933d) | 2026-05-29 → 2028-11-27 (+913d) | 35d → 19d | 50 → 41, 43FF+5d | was named Plan de ejecución plurianual aprobado |
| 56 | **Plataformas de contacto y remotas** | 2027-06-07 → 2027-08-11 (+65d) | 2029-07-20 → 2029-01-16 (-185d) | 555d → 375d |  |  |
| 57 | **Plataforma de posiciones de contacto construida** | 2026-06-01 → 2027-08-11 (+436d) | 2026-07-17 → 2028-10-30 (+836d) | 35d → 319d | 55 → none | was named Plan de adquisiciones aprobado |
| 59 | Construir la terracería, el drenaje y la base de la fase 1 de la plataforma de contacto | 2026-04-13 → 2027-09-23 (+528d) | 2026-06-12 → 2027-12-03 (+539d) | 45d → 52d | 50 → 58 | was named Sistema de gestión ambiental y social y plan de acción vigentes |
| 61 | Construir la terracería, el drenaje y la base de la fase 2 de la plataforma de contacto | 2026-06-15 → 2028-04-12 (+667d) | 2029-07-20 → 2028-06-22 (-393d) | 810d → 52d | 59 → 60FS+5d | was named Mecanismo de quejas y reclamos en operación |
| 62 | Colar el pavimento de concreto de la fase 2 de la plataforma de contacto y sellar las juntas | 2027-06-07 → 2028-06-23 (+382d) | 2029-07-20 → 2028-10-23 (-270d) | 555d → 87d | 64, 65, 59 → 61 | was named Informes de cumplimiento socioambiental presentados |
| 64 | **Plataforma de posiciones remotas construida** | 2026-09-07 → 2028-02-16 (+527d) | 2027-06-04 → 2028-08-22 (+445d) | 195d → 135d | 3, 4, 5, 6, 57, 51 → none | was named Contratos de obras del Componente I firmados |
| 65 | Demoler el SSEI antiguo y despejar la huella de la plataforma remota | 2026-08-03 → 2028-02-16 (+562d) | 2026-11-27 → 2028-03-15 (+474d) | 85d → 21d | 57, 59, 51 → 58, 114 | was named Contrato de supervisión firmado |
| 66 | Ejecutar la terracería y la capa de suelo cemento de 30 cm de la plataforma remota | 2026-08-03 → 2028-03-16 (+591d) | 2026-12-18 → 2028-05-12 (+511d) | 100d → 42d | 57, 51 → 65 | was named Contratos de consultorías del Componente II firmados |
| 67 | Modificar los canales existentes y construir el drenaje y las obras de paso de la plataforma remota | 2026-04-13 → 2028-04-13 (+731d) | 2029-05-25 → 2028-05-25 (-365d) | 815d → 31d | 50 → 66SS+20d | was named Contratos de la unidad ejecutora, evaluación y auditoría firmados |
| 69 | Construir el pavimento asfáltico de los márgenes y las zonas de apoyo terrestre de la plataforma remota | 2026-09-28 → 2028-07-18 (+659d) | 2029-11-23 → 2028-08-22 (-458d) | 825d → 26d | 53 → 68FF+5d | was named Desembolsos justificados e informes financieros presentados |
| 70 | **Señalización, luces y torres de iluminación de plataforma instaladas** | 2026-09-28 → 2028-07-11 (+652d) | 2029-11-23 → 2029-01-16 (-311d) | 825d → 136d | 53 → none | was named Auditorías externas emitidas |
| 71 | Instalar los ductos, las torres de iluminación y las luces de la plataforma de contacto | 2027-06-07 → 2028-09-25 (+476d) | 2029-07-27 → 2028-11-20 (-249d) | 560d → 41d | 64 → 62FF+20d | was named Evaluaciones de medio término y de cierre realizadas |
| 72 | Instalar las luces de borde y las torres de iluminación de la plataforma remota | 2029-11-26 → 2028-07-11 (-503d) | 2030-03-22 → 2028-08-29 (-570d) | 85d → 36d | 31, 36, 39, 40, 41, 43, 44, 45, 46, 47, 61, 62, 67 → 68FF+10d | was named Informe de terminación y cierre administrativo del programa |
| 76 | **Calle de rodaje Foxtrot** | 2027-06-07 → 2028-04-05 (+303d) | 2028-07-14 → 2028-11-10 (+119d) | 290d → 158d |  |  |
| 77 | **Pavimento y hombros de la calle Foxtrot construidos** | 2026-10-30 → 2028-04-05 (+523d) | 2026-10-30 → 2028-08-28 (+668d) | 0d → 104d | 471 → none | was named Protocolo de seguridad operacional aprobado por la AAC |
| 86 | **Estacionamiento y energía solar** | 2027-06-07 → 2027-02-16 (-111d) | 2028-12-01 → 2028-05-31 (-184d) | 390d → 337d |  |  |
| 103 | **SSEI reubicado y en operación** | 2027-06-07 → 2027-06-18 (+11d) | 2028-04-14 → 2028-02-15 (-59d) | 225d → 173d |  |  |
| 115 | **Supervisión, PGAS de obra y recepción** | 2027-06-07 → 2027-01-28 (-130d) | 2029-11-23 → 2029-07-27 (-119d) | 645d → 652d |  |  |
| 146 | **Fortalecimiento institucional** | 2026-12-21 → 2027-04-05 (+105d) | 2029-11-16 → 2029-07-25 (-114d) | 760d → 603d |  |  |
| 154 | **Plan Maestro actualizado y funcionarios capacitados** | 2027-07-19 → 2027-05-26 (-54d) | 2028-07-07 → 2028-08-09 (+33d) | 255d → 316d |  |  |
| 167 | **Estrategia y capacitación BIM** | 2026-12-21 → 2027-04-05 (+105d) | 2027-07-30 → 2027-10-25 (+87d) | 160d → 146d |  |  |
| 194 | **Auditoría y capacitación EDGE** | 2029-07-02 → 2027-04-05 (-819d) | 2029-11-16 → 2029-06-06 (-163d) | 100d → 568d |  |  |
| 228 | **Administración, evaluación y auditorías** |  | 2030-03-22 → 2030-04-01 (+10d) | 1080d → 1086d |  |  |
| 229 | **Condiciones de arranque cumplidas** | 2026-02-02 → 2026-04-16 (+73d) | 2026-09-25 → 2026-07-10 (-77d) | 170d → 62d |  |  |
| 248 | **Planes de ejecución aprobados** | 2026-04-13 → 2026-02-02 (-70d) | 2029-11-23 → 2029-12-05 (+12d) | 945d → 1003d |  |  |
| 268 | **Condiciones socioambientales y de seguridad operacional** | 2026-04-13 → 2026-05-11 (+28d) | 2029-07-20 → 2029-07-26 (+6d) | 855d → 839d |  |  |
| 289 | **Contratos del programa firmados** | 2026-04-13 → 2026-02-02 (-70d) | 2029-05-25 → 2029-07-25 (+61d) | 815d → 908d |  |  |
| 432 | **Control financiero, evaluación y cierre** | 2026-09-28 → 2026-07-20 (-70d) | 2030-03-22 → 2030-04-01 (+10d) | 910d → 966d |  |  |

| ID | Task | Start | Finish | Duration | Predecessors |
| --- | --- | --- | --- | --- | --- |
| 467 | **Hitos del programa** | 2026-04-10 → 2026-05-15 (+35d) | 2030-03-22 → 2030-04-01 (+10d) | 1031d → 1012d |  |
| 468 | Unidad Ejecutora conformada | 2026-04-10 → 2026-05-15 (+35d) | 2026-04-10 → 2026-05-15 (+35d) |  | 50 → 235 |
| 469 | Condiciones previas al primer desembolso cumplidas (ROP, convenio, cuenta) | 2026-09-25 → 2026-07-10 (-77d) | 2026-09-25 → 2026-07-10 (-77d) |  | 53 → 239, 243, 247 |
| 470 | Contratos de obra y de supervisión firmados | 2027-06-04 → 2027-07-28 (+54d) | 2027-06-04 → 2027-07-28 (+54d) |  | 64, 65 → 296, 302, 308, 314, 321, 327, 333, 339 |
| 471 | Protocolo de seguridad operacional aprobado por la AAC | 2026-08-31 → 2027-03-11 (+192d) | 2026-10-30 → 2027-03-11 (+132d) | 45d → 0d | 4, 59 → 280 |
| 472 | SSEI reubicado y en funcionamiento | 2028-04-14 → 2028-02-15 (-59d) | 2028-04-14 → 2028-02-15 (-59d) |  | 26 → 114 |
| 473 | Plataforma de posiciones remotas concluida | 2029-02-16 → 2028-08-22 (-178d) | 2029-02-16 → 2028-08-22 (-178d) |  | 15 → 69 |
| 474 | Terminal ampliada concluida y equipada | 2029-06-29 → 2029-03-16 (-105d) | 2029-06-29 → 2029-03-16 (-105d) |  | 11, 12 → 50, 55 |
| 475 | Estacionamiento con sistema solar concluido | 2028-12-01 → 2028-05-31 (-184d) | 2028-12-01 → 2028-05-31 (-184d) |  | 22, 23 → 97, 102 |
| 476 | Obras recibidas (planos de obra ejecutada y actas aprobados) | 2029-11-23 → 2029-07-05 (-141d) | 2029-11-23 → 2029-07-05 (-141d) |  | 31 → 142, 143, 144, 145 |
| 477 | Cierre administrativo del programa | 2030-03-22 → 2030-04-01 (+10d) | 2030-03-22 → 2030-04-01 (+10d) |  | 72, Planes operativos anuales aprobados, 69, 70, 71 → 466 |
