How a schedule from an exported table changed from version to version. A marks actual dates.

## Version 1 (saved 2026-10-31)

Note of the change: Merge branch 'main' of https://github.com/RoderickGrc/proyecto-api-aeropuerto

| Task | Start | Finish |
| --- | --- | --- |
| Revisar técnicamente el expediente de diseño de la terminal (planos, especificaciones y cantidades) | 2026-05-18 | 2026-06-29 |
| Ajustar los diseños y el presupuesto de la terminal con la firma diseñadora (FIDS, CUTE, puentes de abordaje y observaciones de la revisión) | 2026-06-30 | 2026-08-12 |
| Revisar la coordinación del modelo BIM de la terminal con los planos y las especificaciones | 2026-07-22 | 2026-08-12 |
| Aprobar el expediente de diseño de la terminal | 2026-09-04 | 2026-09-18 |
| Emitir la no objeción del BID a las especificaciones técnicas y los planos de la licitación de la terminal | 2026-09-21 | 2026-09-28 |
| Realizar sondeos geotécnicos en las tres posiciones remotas y verificar el diseño de pavimentos | 2026-05-18 | 2026-06-30 |
| Revisar técnicamente los diseños de plataformas, calle Foxtrot, drenaje y ayudas visuales | 2026-06-30 | 2026-08-11 |
| Revisar con la AAC la geometría del lado aire y el plan de fases de las obras | 2026-08-12 | 2026-09-10 |
| Ajustar los diseños y el presupuesto de plataformas y calle Foxtrot con la firma diseñadora | 2026-09-11 | 2026-10-16 |
| Aprobar los diseños de plataformas y calle Foxtrot | 2026-10-19 | 2026-11-02 |
| Emitir la no objeción del BID a las especificaciones técnicas y los planos de la licitación de plataformas y Foxtrot | 2026-11-03 | 2026-11-10 |
| Revisar técnicamente el expediente de diseño del estacionamiento (estructura, circulaciones y accesibilidad universal) | 2026-05-18 | 2026-06-30 |
| Revisar el diseño del sistema fotovoltaico y su conexión eléctrica | 2026-06-01 | 2026-06-17 |
| Ajustar los diseños y el presupuesto del estacionamiento con la firma diseñadora | 2026-07-01 | 2026-07-30 |
| Aprobar el expediente de diseño del estacionamiento | 2026-07-31 | 2026-08-14 |
| Emitir la no objeción del BID a las especificaciones técnicas y los planos de la licitación del estacionamiento | 2026-08-17 | 2026-08-24 |
| Revisar técnicamente el diseño del edificio del SSEI y de sus vías de acceso | 2026-07-01 | 2026-07-29 |
| Validar con el SSEI y la AAC el emplazamiento, los tiempos de respuesta y la continuidad del servicio | 2026-07-30 | 2026-08-20 |
| Ajustar el diseño del SSEI con la firma diseñadora | 2026-08-21 | 2026-09-11 |
| Aprobar el diseño del SSEI | 2026-09-14 | 2026-09-28 |
| Emitir la no objeción del BID a las especificaciones técnicas y los planos de la licitación del SSEI | 2026-09-29 | 2026-10-06 |
| Movilizar al contratista e instalar cerramientos, accesos y obras provisionales con la terminal en operación | 2027-05-27 | 2027-07-08 |
| Ejecutar la demolición, el movimiento de tierra y la cimentación de la terminal | 2027-07-09 | 2027-10-26 |
| Construir la estructura de concreto de los niveles 1 a 3 de la terminal | 2027-09-03 | 2028-03-07 |
| Montar la estructura metálica y la cubierta de la terminal | 2028-01-14 | 2028-05-01 |
| Instalar las fachadas de vidrio y los cerramientos exteriores de la terminal | 2028-02-25 | 2028-06-19 |
| Construir las divisiones, la mampostería liviana y los cielos de los tres niveles | 2028-03-10 | 2028-07-21 |
| Aplicar los acabados de pisos y paredes de las seis salas de espera, los pasillos, los locales y el salón VIP | 2028-05-19 | 2028-10-16 |
| Integrar la ampliación con la terminal de la Etapa 1 y habilitar las circulaciones de pasajeros | 2028-08-21 | 2028-10-23 |
| Instalar las redes eléctricas, de agua, de drenaje y los ductos de climatización por nivel | 2028-02-25 | 2028-08-04 |
| Instalar la subestación, los tableros, la planta de emergencia y los equipos de climatización | 2028-05-02 | 2028-08-17 |
| Instalar la detección y supresión de incendios, la voz y datos y el control de acceso | 2028-05-11 | 2028-08-18 |
| Realizar las pruebas, el balanceo y la puesta en marcha de las instalaciones de la terminal | 2028-09-08 | 2028-11-20 |
| Elaborar y aprobar los planos de taller de los seis puentes de abordaje | 2027-08-20 | 2027-10-18 |
| Fabricar y entregar en sitio los seis puentes de abordaje | 2027-10-19 | 2028-04-19 |
| Instalar y conectar los seis puentes de abordaje a la terminal y a la plataforma | 2028-10-24 | 2029-01-03 |
| Instalar el mobiliario, los escáneres de seguridad y los sistemas de información de vuelo | 2028-09-29 | 2028-11-20 |
| Probar los equipos, capacitar al personal de CEPA y entregar los manuales | 2029-01-04 | 2029-02-15 |
| Realizar las pruebas integradas de operación de la terminal con las aerolíneas y las autoridades | 2029-02-16 | 2029-03-16 |
| Verificar en los planos aprobados los recorridos de accesibilidad universal y de movilidad del cuidado | 2026-08-13 | 2026-09-03 |
| Verificar en el diseño aprobado las metas EDGE Advanced de energía, agua y carbono incorporado | 2026-08-13 | 2026-09-03 |
| Verificar en obra la ejecución de los recorridos accesibles y de los espacios de movilidad del cuidado | 2028-10-02 | 2028-10-30 |
| Verificar en obra las medidas de eficiencia y reunir las evidencias para la auditoría EDGE | 2028-11-01 | 2028-11-27 |
| Movilizar al contratista de plataformas y Foxtrot e instalar el cerramiento y los accesos del lado aire | 2027-08-11 | 2027-09-22 |
| Construir la terracería, el drenaje y la base de la fase 1 de la plataforma de contacto | 2027-09-23 | 2027-12-03 |
| Colar el pavimento de concreto de la fase 1 de la plataforma de contacto y sellar las juntas | 2027-12-06 | 2028-04-04 |
| Construir la terracería, el drenaje y la base de la fase 2 de la plataforma de contacto | 2028-04-12 | 2028-06-22 |
| Colar el pavimento de concreto de la fase 2 de la plataforma de contacto y sellar las juntas | 2028-06-23 | 2028-10-23 |
| Instalar los ductos y los servicios de apoyo a aeronaves de la plataforma de contacto | 2028-09-25 | 2028-10-30 |
| Demoler el SSEI antiguo y despejar la huella de la plataforma remota | 2028-02-16 | 2028-03-15 |
| Ejecutar la terracería y la capa de suelo cemento de 30 cm de la plataforma remota | 2028-03-16 | 2028-05-12 |
| Modificar los canales existentes y construir el drenaje y las obras de paso de la plataforma remota | 2028-04-13 | 2028-05-25 |
| Colar el pavimento de concreto de 34 cm de la plataforma remota y sellar las juntas | 2028-05-26 | 2028-08-15 |
| Construir el pavimento asfáltico de los márgenes y las zonas de apoyo terrestre de la plataforma remota | 2028-07-18 | 2028-08-22 |
| Instalar los ductos, las torres de iluminación y las luces de la plataforma de contacto | 2028-09-25 | 2028-11-20 |
| Instalar las luces de borde y las torres de iluminación de la plataforma remota | 2028-07-11 | 2028-08-29 |
| Pintar la señalización horizontal de las plataformas nuevas | 2028-11-28 | 2028-12-14 |
| Probar las luces y la señalización de las plataformas nuevas | 2028-12-15 | 2028-12-29 |
| Autorizar la puesta en servicio de las plataformas nuevas | 2029-01-01 | 2029-01-16 |
| Ejecutar la terracería, la base granular y el drenaje de la calle Foxtrot | 2028-04-05 | 2028-06-15 |
| Pavimentar con concreto asfáltico la calle Foxtrot y los hombros | 2028-06-16 | 2028-07-28 |
| Construir la intersección de Foxtrot con la calle de rodaje Alfa en ventanas de cierre nocturnas | 2028-07-14 | 2028-08-28 |
| Instalar los ductos, el cableado y las luces de borde y de los puntos de espera de la calle Foxtrot | 2028-08-29 | 2028-10-10 |
| Pintar la señalización horizontal de la calle Foxtrot | 2028-08-29 | 2028-09-11 |
| Probar el balizamiento y la iluminación de la calle Foxtrot | 2028-10-11 | 2028-10-25 |
| Autorizar la puesta en servicio de la calle Foxtrot | 2028-10-26 | 2028-11-10 |
| Movilizar al contratista e instalar los cerramientos y las obras provisionales del sitio del estacionamiento | 2027-02-16 | 2027-03-30 |
| Construir la cimentación del edificio de estacionamiento | 2027-03-31 | 2027-07-08 |
| Construir la estructura de los niveles 1 y 2 del estacionamiento | 2027-05-12 | 2027-11-04 |
| Construir la estructura del nivel superior, la cubierta y las rampas del estacionamiento | 2027-09-08 | 2027-12-10 |

| Task | Start | Finish |
| --- | --- | --- |
| Instalar las redes eléctricas, de iluminación, de drenaje y de protección contra incendios del estacionamiento | 2027-07-30 | 2027-12-31 |
| Construir los acabados, los ascensores, las rutas accesibles y la señalización vial del estacionamiento | 2027-11-10 | 2028-04-04 |
| Instalar el control de acceso, las barreras, el cobro y la guía de plazas del estacionamiento | 2027-12-01 | 2028-02-10 |
| Habilitar las áreas de alquiler de vehículos y la gestión del tráfico interno | 2027-11-24 | 2028-01-19 |
| Probar los sistemas de acceso y tráfico y capacitar al personal de operación | 2028-02-11 | 2028-03-09 |
| Tramitar la autorización de interconexión del sistema solar con la red de distribución | 2027-05-11 | 2027-07-01 |
| Instalar las estructuras de soporte y los paneles fotovoltaicos en la cubierta del estacionamiento | 2028-02-08 | 2028-04-11 |
| Instalar los inversores, el cableado, los tableros y los medidores del sistema solar | 2028-03-14 | 2028-04-25 |
| Probar y energizar el sistema solar y entregar el estacionamiento con sus manuales | 2028-04-26 | 2028-05-31 |
| Movilizar al contratista e instalar los cerramientos y los accesos del sitio del SSEI | 2027-06-18 | 2027-07-15 |
| Construir la cimentación y la estructura del edificio del SSEI | 2027-07-16 | 2027-09-24 |
| Construir la cubierta, los cerramientos y las instalaciones del edificio del SSEI | 2027-08-27 | 2027-11-12 |
| Construir las vías de acceso y de salida a la plataforma del SSEI | 2027-08-13 | 2027-10-08 |
| Instalar los acabados, los sistemas de alarma y comunicaciones y probar el edificio del SSEI | 2027-11-01 | 2027-12-27 |
| Preparar el plan de traslado y de cobertura del servicio durante el traslado del SSEI | 2027-08-27 | 2027-09-24 |
| Dar la conformidad a la cobertura de protección contra incendios durante el traslado del SSEI | 2027-09-27 | 2027-10-11 |
| Equipar el edificio nuevo y trasladar al personal y los vehículos del SSEI | 2028-01-10 | 2028-01-31 |
| Realizar las pruebas de tiempo de respuesta y declarar en operación el SSEI nuevo | 2028-02-01 | 2028-02-15 |
| Movilizar a la firma de supervisión de la terminal | 2027-05-20 | 2027-06-03 |
| Supervisar la construcción de la terminal | 2027-06-04 | 2029-04-16 |
| Movilizar a la firma de supervisión del estacionamiento | 2027-02-04 | 2027-02-18 |
| Supervisar la construcción del estacionamiento y del sistema solar | 2027-02-19 | 2028-06-19 |
| Presentar el informe final de supervisión de la terminal | 2029-07-06 | 2029-07-27 |
| Presentar el informe final de supervisión del estacionamiento | 2028-08-17 | 2028-09-07 |
| Movilizar a la firma de supervisión de plataformas y calle Foxtrot | 2027-07-29 | 2027-08-12 |
| Supervisar la construcción de plataformas y de la calle Foxtrot | 2027-08-13 | 2029-02-02 |
| Movilizar a la firma de supervisión del SSEI | 2027-06-11 | 2027-06-23 |
| Supervisar la construcción del edificio del SSEI | 2027-06-24 | 2028-01-07 |
| Presentar el informe final de supervisión de plataformas y calle Foxtrot | 2029-04-04 | 2029-04-25 |
| Presentar el informe final de supervisión del SSEI | 2028-02-22 | 2028-03-09 |
| Revisar y aprobar el PGAS de construcción del contratista del estacionamiento | 2027-01-28 | 2027-02-15 |
| Revisar y aprobar el PGAS de construcción del contratista de la terminal | 2027-04-26 | 2027-05-17 |
| Revisar y aprobar el PGAS de construcción del contratista del SSEI | 2027-05-28 | 2027-06-09 |
| Revisar y aprobar el PGAS de construcción del contratista de plataformas y Foxtrot | 2027-07-23 | 2027-08-10 |
| Dar seguimiento al cumplimiento del PGAS durante las obras | 2027-02-16 | 2029-04-16 |
| Verificar el cierre de las instalaciones temporales y la restauración de los sitios de obra | 2029-04-17 | 2029-05-08 |
| Realizar la recepción provisional de la terminal y levantar la lista de pendientes | 2029-03-19 | 2029-04-16 |
| Realizar la recepción provisional del estacionamiento y del sistema solar y levantar la lista de pendientes | 2028-06-01 | 2028-06-19 |
| Realizar la recepción provisional de las plataformas y de la calle Foxtrot y levantar la lista de pendientes | 2029-01-17 | 2029-02-02 |
| Realizar la recepción provisional del edificio del SSEI y levantar la lista de pendientes | 2027-12-28 | 2028-01-07 |
| Verificar la subsanación de pendientes, recibir los planos de obra ejecutada y firmar el acta de recepción definitiva de la terminal | 2029-04-17 | 2029-07-05 |
| Verificar la subsanación de pendientes, recibir los planos de obra ejecutada y firmar el acta de recepción definitiva del estacionamiento y el sistema solar | 2028-06-20 | 2028-08-16 |
| Verificar la subsanación de pendientes, recibir los planos de obra ejecutada y firmar el acta de recepción definitiva de las plataformas y la calle Foxtrot | 2029-02-05 | 2029-04-03 |
| Verificar la subsanación de pendientes, recibir los planos de obra ejecutada y firmar el acta de recepción definitiva del edificio del SSEI | 2028-01-10 | 2028-02-21 |
| Elaborar el plan de trabajo y el informe inicial del plan estratégico | 2027-05-26 | 2027-06-09 |
| Elaborar el diagnóstico del sistema aeronáutico, su marco normativo y su infraestructura | 2027-06-10 | 2027-07-29 |
| Formular la visión, los lineamientos y el plan de acción y redactar el borrador del plan estratégico | 2027-07-30 | 2027-09-24 |
| Revisar el borrador del plan estratégico y consolidar las observaciones de CEPA y del BID | 2027-09-27 | 2027-10-13 |
| Incorporar las observaciones y entregar la versión final del plan estratégico | 2027-10-14 | 2027-10-28 |
| Aprobar el plan estratégico final y remitirlo al BID | 2027-10-29 | 2027-11-09 |
| Elaborar el plan de trabajo y el informe inicial del Plan Maestro | 2027-05-26 | 2027-06-15 |
| Elaborar el inventario, el diagnóstico de instalaciones y el pronóstico de demanda | 2027-06-16 | 2027-09-30 |
| Determinar los requerimientos, evaluar alternativas y redactar el borrador del Plan Maestro con su plan de implementación y financiero | 2027-10-01 | 2028-03-01 |
| Revisar el borrador del Plan Maestro y consolidar las observaciones de CEPA, la AAC y el BID | 2028-03-02 | 2028-04-07 |
| Incorporar las observaciones y las recomendaciones del estudio de conectividad y entregar la versión final del Plan Maestro | 2028-04-10 | 2028-05-08 |
| Aprobar el Plan Maestro actualizado y entregarlo al BID | 2028-05-09 | 2028-05-23 |
| Preparar el programa, los materiales y la lista de participantes de la capacitación en planificación, gestión y operación | 2028-03-02 | 2028-03-30 |
| Impartir los cursos de planificación, gestión y operación aeroportuaria al menos a 21 funcionarios | 2028-05-24 | 2028-07-20 |
| Aplicar las evaluaciones y los talleres de cierre a los participantes | 2028-07-21 | 2028-07-31 |
| Certificar a los funcionarios aprobados y registrar el indicador R2.1 | 2028-08-01 | 2028-08-09 |
| Elaborar el plan de trabajo y el informe inicial de la estrategia BIM | 2027-04-05 | 2027-04-19 |
| Diagnosticar la madurez BIM de CEPA, sus procesos de diseño y sus herramientas | 2027-04-20 | 2027-05-18 |
| Formular la estrategia BIM (usos, roles, entorno común de datos y requisitos de información) y redactar el borrador | 2027-05-19 | 2027-06-29 |
| Revisar el borrador de la estrategia BIM y consolidar las observaciones de CEPA | 2027-06-30 | 2027-07-14 |
| Incorporar las observaciones y entregar la versión final de la estrategia BIM | 2027-07-15 | 2027-07-26 |
| Aprobar la estrategia BIM final | 2027-07-27 | 2027-08-04 |
| Preparar el programa y los materiales de la capacitación en BIM | 2027-07-27 | 2027-08-16 |
| Impartir los cursos de BIM al personal de ingeniería de CEPA | 2027-08-17 | 2027-10-05 |
| Evaluar a los participantes en BIM | 2027-10-06 | 2027-10-14 |
| Entregar los materiales y el registro de la capacitación en BIM | 2027-10-15 | 2027-10-25 |

| Task | Start | Finish |
| --- | --- | --- |
| Elaborar el plan de trabajo y el informe inicial del estudio de conectividad terrestre | 2027-05-26 | 2027-06-09 |
| Diagnosticar el acceso terrestre al AIES con aforos, encuestas y análisis de los modos de transporte | 2027-06-10 | 2027-08-05 |
| Evaluar alternativas de acceso hacia San Salvador y los destinos turísticos y redactar el borrador del estudio | 2027-08-06 | 2027-10-08 |
| Revisar el borrador del estudio de conectividad y consolidar las observaciones de CEPA | 2027-10-11 | 2027-10-27 |
| Incorporar las observaciones y entregar el informe final del estudio de conectividad | 2027-10-28 | 2027-11-11 |
| Aprobar el informe final del estudio de conectividad | 2027-11-12 | 2027-11-23 |
| Elaborar el plan de trabajo y el informe inicial del estudio de diversificación de destinos | 2027-04-05 | 2027-04-19 |
| Diagnosticar el mercado actual del AIES (tráfico, aerolíneas, rutas y zona de influencia) | 2027-04-20 | 2027-06-07 |
| Analizar los mercados de origen y destino y las aerolíneas potenciales, priorizarlos y redactar el borrador del estudio | 2027-06-08 | 2027-08-10 |
| Revisar el borrador del estudio de diversificación y consolidar las observaciones de CEPA | 2027-08-11 | 2027-08-27 |
| Incorporar las observaciones y entregar el informe final del estudio de diversificación | 2027-08-30 | 2027-09-13 |
| Aprobar el informe final del estudio de diversificación | 2027-09-14 | 2027-09-23 |
| Registrar los proyectos de terminal y estacionamiento en EDGE y elaborar la autoevaluación | 2027-04-05 | 2027-05-03 |
| Realizar la auditoría de diseño y obtener el certificado preliminar EDGE | 2027-05-04 | 2027-06-22 |
| Acompañar a CEPA y a los contratistas para conservar las medidas EDGE durante la construcción | 2027-06-23 | 2029-03-16 |
| Realizar la auditoría en sitio de las medidas EDGE de la terminal y del estacionamiento terminados | 2029-03-19 | 2029-04-23 |
| Atender las observaciones del proveedor de certificación y presentar el informe de auditoría | 2029-04-24 | 2029-05-29 |
| Recibir el certificado EDGE final y el informe de auditoría | 2029-05-30 | 2029-06-06 |
| Preparar el programa y los materiales de la capacitación en EDGE | 2027-06-23 | 2027-07-07 |
| Impartir el curso de EDGE al personal previsto | 2029-04-24 | 2029-05-15 |
| Evaluar y certificar a los participantes en EDGE | 2029-05-16 | 2029-05-24 |
| Entregar el registro de la capacitación en EDGE | 2029-05-25 | 2029-06-01 |
| Elaborar el plan de trabajo y el informe inicial del estudio de separación de flujos | 2027-04-05 | 2027-04-19 |
| Diagnosticar los flujos de llegadas y salidas de la terminal antigua mediante levantamiento y observación | 2027-04-20 | 2027-05-18 |
| Identificar y priorizar las intervenciones de separación de flujos y redactar el borrador del estudio | 2027-05-19 | 2027-06-29 |
| Revisar el borrador del estudio de separación de flujos y consolidar las observaciones de CEPA | 2027-06-30 | 2027-07-14 |
| Incorporar las observaciones y entregar el informe final del estudio de separación de flujos | 2027-07-15 | 2027-07-26 |
| Aprobar el informe final del estudio de separación de flujos | 2027-07-27 | 2027-08-04 |
| Elaborar el plan de trabajo y el informe inicial del estudio de movilidad interna | 2027-04-05 | 2027-04-19 |
| Diagnosticar el tráfico de las vías internas con aforos en horas pico y en el dejar y recoger pasajeros | 2027-04-20 | 2027-05-31 |
| Analizar los puntos de conflicto, definir las medidas y redactar el borrador del estudio | 2027-06-01 | 2027-07-20 |
| Revisar el borrador del estudio de movilidad interna y consolidar las observaciones de CEPA | 2027-07-21 | 2027-08-04 |
| Incorporar las observaciones y entregar el informe final del estudio de movilidad interna | 2027-08-05 | 2027-08-16 |
| Aprobar el informe final del estudio de movilidad interna | 2027-08-17 | 2027-08-25 |
| Elaborar el diagnóstico de necesidades, el programa y los materiales de capacitación en igualdad e inclusión | 2027-04-05 | 2027-05-14 |
| Impartir la capacitación a la primera cohorte de 100 funcionarios y evaluarla | 2027-05-17 | 2027-07-02 |
| Impartir la capacitación a la segunda cohorte de 100 funcionarios y evaluarla | 2028-05-15 | 2028-06-30 |
| Impartir la capacitación a la tercera cohorte de 100 funcionarios y evaluarla | 2029-05-14 | 2029-06-29 |
| Emitir las constancias de los 300 funcionarios aprobados y entregar el informe final del programa | 2029-07-02 | 2029-07-16 |
| Aprobar el informe final y registrar el indicador T2 en el informe semestral | 2029-07-17 | 2029-07-25 |
| Incorporar al Coordinador del Programa, al Coordinador general de obra y al Especialista de planificación y monitoreo | 2026-04-16 | 2026-04-22 |
| Incorporar al Especialista de adquisiciones | 2026-04-23 | 2026-04-29 |
| Incorporar al Especialista técnico, al Especialista financiero y al Especialista socioambiental | 2026-05-04 | 2026-05-08 |
| Registrar las firmas autorizadas del programa ante el BID | 2026-04-23 | 2026-04-29 |
| Documentar ante el BID la conformación de la UEP con dedicación exclusiva | 2026-05-11 | 2026-05-15 |
| Ajustar el borrador del ROP acordado con el BID a la estructura de la UEP y a las cifras del PA | 2026-06-01 | 2026-06-19 |
| Obtener la no objeción del BID al ROP ajustado | 2026-06-22 | 2026-07-03 |
| Aprobar el ROP en CEPA mediante resolución de la autoridad superior | 2026-07-06 | 2026-07-10 |
| Redactar el convenio de transferencia de recursos entre la República y CEPA | 2026-05-18 | 2026-06-12 |
| Obtener la no objeción del BID al texto del convenio | 2026-06-15 | 2026-06-19 |
| Suscribir el convenio y ponerlo en vigencia | 2026-06-22 | 2026-07-03 |
| Solicitar a la Dirección General de Tesorería la apertura de la cuenta especial en el BCR | 2026-04-30 | 2026-05-13 |
| Abrir y habilitar la cuenta especial para recibir desembolsos | 2026-05-14 | 2026-05-27 |
| Registrar la cuenta especial ante el BID | 2026-05-28 | 2026-06-03 |
| Actualizar la EDT, el cronograma y el presupuesto del PEP de noviembre de 2025 con las fechas reales del préstamo | 2026-04-23 | 2026-05-20 |
| Integrar al PEP el calendario de adquisiciones, hitos y desembolsos por componente | 2026-05-21 | 2026-06-03 |
| Aprobar el PEP en CEPA y presentarlo al BID | 2026-06-04 | 2026-06-10 |
| Elaborar el POA 2027 con metas, cronograma físico y financiero y presupuesto por producto | 2026-11-02 | 2026-11-27 |
| Aprobar el POA 2027 en CEPA y presentarlo al BID antes del inicio del año | 2026-11-30 | 2026-12-04 |
| Elaborar el POA 2028 con metas, cronograma físico y financiero y presupuesto por producto | 2027-11-01 | 2027-11-26 |
| Aprobar el POA 2028 en CEPA y presentarlo al BID antes del inicio del año | 2027-11-29 | 2027-12-03 |
| Elaborar el POA 2029 con metas, cronograma físico y financiero y presupuesto por producto | 2028-11-01 | 2028-11-28 |
| Aprobar el POA 2029 en CEPA y presentarlo al BID antes del inicio del año | 2028-11-29 | 2028-12-05 |
| Elaborar el POA 2030 con metas, cronograma físico y financiero y presupuesto por producto | 2029-11-01 | 2029-11-28 |
| Aprobar el POA 2030 en CEPA y presentarlo al BID antes del inicio del año | 2029-11-29 | 2029-12-05 |
| Elaborar el Plan de Adquisiciones inicial 2026-1 con estacionamiento, su supervisión, la UEP y la auditoría del año 1 | 2026-02-02 | 2026-03-13 |
| Obtener la no objeción del BID al Plan de Adquisiciones 2026-1 | 2026-04-07 | 2026-04-13 |
| Actualizar el Plan de Adquisiciones a la versión 2026-2 con terminal, SSEI, plataformas y las tres supervisiones restantes | 2026-04-14 | 2026-05-11 |
| Obtener la no objeción del BID al Plan de Adquisiciones 2026-2 | 2026-07-08 | 2026-07-14 |
| Mantener el Plan de Adquisiciones actualizado en el sistema del BID cada vez que cambie un proceso | 2026-07-15 | 2029-07-25 |

| Task | Start | Finish |
| --- | --- | --- |
| Revisar el PAAS del 8 de octubre de 2025 y ajustar el SGAS a la organización de la UEP | 2026-05-11 | 2026-05-29 |
| Elaborar los procedimientos y formatos del SGAS: selección de obra, reporte de incidentes e informe de cumplimiento | 2026-06-01 | 2026-06-26 |
| Obtener la no objeción del BID al SGAS y al PAAS actualizados | 2026-06-29 | 2026-07-10 |
| Incorporar el SGAS y el PAAS como anexos del ROP aprobado | 2026-07-13 | 2026-07-17 |
| Elaborar el Plan de Gestión del Riesgo de Desastres y Cambio Climático final con los diseños aprobados | 2026-11-11 | 2026-12-23 |
| Presentar al BID el Plan de Gestión del Riesgo de Desastres y Cambio Climático final | 2026-12-24 | 2026-12-31 |
| Evaluar el riesgo operacional y definir las fases de trabajo del lado aire junto con la operación aeroportuaria | 2026-11-11 | 2026-12-08 |
| Elaborar el protocolo de seguridad operacional para obras del lado aire, de uso de contratistas y supervisión | 2026-12-09 | 2027-01-19 |
| Presentar el protocolo a la AAC y atender sus observaciones | 2027-01-20 | 2027-02-09 |
| Aprobar el protocolo de seguridad operacional de las obras del lado aire | 2027-02-10 | 2027-03-11 |
| Diseñar el procedimiento del mecanismo de quejas y reclamos: canales, plazos de respuesta y registro de casos | 2026-07-20 | 2026-08-07 |
| Instalar y difundir los canales del mecanismo entre trabajadores, usuarios, arrendatarios, aerolíneas y comunidades | 2026-08-10 | 2026-09-04 |
| Operar el mecanismo, registrar los casos y dar respuesta durante las obras | 2026-09-07 | 2029-03-16 |
| Acordar con el BID el formato del informe de cumplimiento ambiental y social semestral | 2026-07-20 | 2026-07-31 |
| Presentar los informes semestrales de cumplimiento ambiental y social junto con el informe de progreso | 2027-02-16 | 2029-03-16 |
| Presentar al BID el informe final ambiental y social del programa | 2029-07-06 | 2029-07-26 |
| Preparar los documentos de licitación del estacionamiento y el sistema solar | 2026-06-23 | 2026-08-24 |
| Obtener la no objeción del BID a los documentos de licitación del estacionamiento y el sistema solar | 2026-08-25 | 2026-08-31 |
| Publicar el aviso específico de adquisiciones del estacionamiento y el sistema solar y recibir ofertas hasta la apertura | 2026-09-04 | 2026-10-16 |
| Evaluar las ofertas del estacionamiento y el sistema solar y elaborar el informe de evaluación | 2026-10-19 | 2026-11-26 |
| Obtener la no objeción del BID a la evaluación y a la recomendación de adjudicación del estacionamiento y el sistema solar | 2026-11-27 | 2026-12-03 |
| Adjudicar y firmar el contrato de obra del estacionamiento y el sistema solar | 2026-12-04 | 2027-01-27 |
| Preparar los documentos de licitación de la terminal de pasajeros | 2026-07-28 | 2026-09-28 |
| Obtener la no objeción del BID a los documentos de licitación de la terminal de pasajeros | 2026-09-29 | 2026-10-05 |
| Publicar el aviso específico de adquisiciones de la terminal de pasajeros y recibir ofertas hasta la apertura | 2026-10-08 | 2026-11-20 |
| Evaluar las ofertas de la terminal de pasajeros y elaborar el informe de evaluación | 2026-11-23 | 2027-01-21 |
| Obtener la no objeción del BID a la evaluación y a la recomendación de adjudicación de la terminal de pasajeros | 2027-01-22 | 2027-01-28 |
| Adjudicar y firmar el contrato de obra de la terminal de pasajeros | 2027-01-29 | 2027-04-23 |
| Preparar los documentos de licitación del SSEI | 2026-08-05 | 2026-10-06 |
| Obtener la no objeción del BID a los documentos de licitación del SSEI | 2026-10-07 | 2026-10-13 |
| Publicar el aviso específico de adquisiciones del SSEI y recibir ofertas hasta la apertura | 2027-01-06 | 2027-02-17 |
| Evaluar las ofertas del SSEI y elaborar el informe de evaluación | 2027-02-18 | 2027-03-29 |
| Obtener la no objeción del BID a la evaluación y a la recomendación de adjudicación del SSEI | 2027-03-30 | 2027-04-05 |
| Adjudicar y firmar el contrato de obra del SSEI | 2027-04-06 | 2027-05-27 |
| Preparar los documentos de licitación de las plataformas y la calle Foxtrot | 2026-09-09 | 2026-11-10 |
| Obtener la no objeción del BID a los documentos de licitación de las plataformas y la calle Foxtrot | 2026-11-11 | 2026-11-17 |
| Publicar el aviso específico de adquisiciones de las plataformas y la calle Foxtrot y recibir ofertas hasta la apertura | 2027-03-12 | 2027-04-23 |
| Evaluar las ofertas de las plataformas y la calle Foxtrot y elaborar el informe de evaluación | 2027-04-26 | 2027-05-28 |
| Obtener la no objeción del BID a la evaluación y a la recomendación de adjudicación de las plataformas y la calle Foxtrot | 2027-05-31 | 2027-06-04 |
| Adjudicar y firmar el contrato de obra de las plataformas y la calle Foxtrot | 2027-06-07 | 2027-07-22 |
| Preparar los términos de referencia, la solicitud de expresiones de interés y la lista corta de la supervisión del estacionamiento y el sistema solar | 2026-05-06 | 2026-05-28 |
| Obtener la no objeción del BID a los términos de referencia y a la lista corta de la supervisión del estacionamiento y el sistema solar | 2026-05-29 | 2026-06-04 |
| Invitar a las firmas de la lista corta y recibir las propuestas de la supervisión del estacionamiento y el sistema solar | 2026-06-05 | 2026-07-30 |
| Evaluar las propuestas técnicas y económicas y negociar el contrato de la supervisión del estacionamiento y el sistema solar | 2026-07-31 | 2027-01-20 |
| Obtener la no objeción del BID al informe de evaluación combinado y al contrato negociado de la supervisión del estacionamiento y el sistema solar | 2027-01-21 | 2027-01-27 |
| Firmar el contrato de supervisión del estacionamiento y el sistema solar | 2027-01-28 | 2027-02-03 |
| Preparar los términos de referencia, la solicitud de expresiones de interés y la lista corta de la supervisión de la terminal | 2026-10-13 | 2026-12-18 |
| Obtener la no objeción del BID a los términos de referencia y a la lista corta de la supervisión de la terminal | 2026-12-21 | 2026-12-25 |
| Invitar a las firmas de la lista corta y recibir las propuestas de la supervisión de la terminal | 2026-12-28 | 2027-02-05 |
| Evaluar las propuestas técnicas y económicas y negociar el contrato de la supervisión de la terminal | 2027-02-08 | 2027-04-30 |
| Obtener la no objeción del BID al informe de evaluación combinado y al contrato negociado de la supervisión de la terminal | 2027-05-03 | 2027-05-07 |
| Firmar el contrato de supervisión de la terminal | 2027-05-10 | 2027-05-19 |
| Preparar los términos de referencia, la solicitud de expresiones de interés y la lista corta de la supervisión del SSEI | 2026-11-11 | 2027-01-14 |
| Obtener la no objeción del BID a los términos de referencia y a la lista corta de la supervisión del SSEI | 2027-01-15 | 2027-01-21 |
| Invitar a las firmas de la lista corta y recibir las propuestas de la supervisión del SSEI | 2027-01-22 | 2027-03-04 |
| Evaluar las propuestas técnicas y económicas y negociar el contrato de la supervisión del SSEI | 2027-03-05 | 2027-05-24 |
| Obtener la no objeción del BID al informe de evaluación combinado y al contrato negociado de la supervisión del SSEI | 2027-05-25 | 2027-05-31 |
| Firmar el contrato de supervisión del SSEI | 2027-06-01 | 2027-06-10 |
| Preparar los términos de referencia, la solicitud de expresiones de interés y la lista corta de la supervisión de las plataformas y la calle Foxtrot | 2027-01-19 | 2027-03-15 |
| Obtener la no objeción del BID a los términos de referencia y a la lista corta de la supervisión de las plataformas y la calle Foxtrot | 2027-03-16 | 2027-03-22 |
| Invitar a las firmas de la lista corta y recibir las propuestas de la supervisión de las plataformas y la calle Foxtrot | 2027-03-23 | 2027-05-03 |
| Evaluar las propuestas técnicas y económicas y negociar el contrato de la supervisión de las plataformas y la calle Foxtrot | 2027-05-04 | 2027-07-09 |
| Obtener la no objeción del BID al informe de evaluación combinado y al contrato negociado de la supervisión de las plataformas y la calle Foxtrot | 2027-07-12 | 2027-07-16 |
| Firmar el contrato de supervisión de las plataformas y la calle Foxtrot | 2027-07-19 | 2027-07-28 |
| Incluir las consultorías del Componente II en el Plan de Adquisiciones | 2026-11-02 | 2026-11-20 |
| Obtener la no objeción del BID a la actualización del PA con el Componente II | 2026-11-23 | 2026-11-27 |
| Preparar los términos de referencia, la solicitud de expresiones de interés y la lista corta para el plan estratégico del sistema aeronáutico (producto 2.1) | 2026-11-30 | 2027-01-22 |
| Obtener la no objeción del BID a los términos de referencia y a la lista corta del plan estratégico del sistema aeronáutico (producto 2.1) | 2027-01-25 | 2027-01-29 |
| Invitar a las firmas de la lista corta y recibir las propuestas para el plan estratégico del sistema aeronáutico (producto 2.1) | 2027-02-01 | 2027-03-12 |
| Evaluar las propuestas y negociar el contrato para el plan estratégico del sistema aeronáutico (producto 2.1) | 2027-03-15 | 2027-04-30 |

| Task | Start | Finish |
| --- | --- | --- |
| Obtener la no objeción del BID al informe de evaluación y al contrato negociado del plan estratégico del sistema aeronáutico (producto 2.1) | 2027-05-03 | 2027-05-11 |
| Firmar el contrato de consultoría para el plan estratégico del sistema aeronáutico (producto 2.1) | 2027-05-12 | 2027-05-25 |
| Preparar los términos de referencia, la solicitud de expresiones de interés y la lista corta para la actualización del Plan Maestro y la capacitación (productos 2.2.1 y 2.2.2) | 2026-11-30 | 2027-01-22 |
| Obtener la no objeción del BID a los términos de referencia y a la lista corta de la actualización del Plan Maestro y la capacitación (productos 2.2.1 y 2.2.2) | 2027-01-25 | 2027-01-29 |
| Invitar a las firmas de la lista corta y recibir las propuestas para la actualización del Plan Maestro y la capacitación (productos 2.2.1 y 2.2.2) | 2027-02-01 | 2027-03-12 |
| Evaluar las propuestas y negociar el contrato para la actualización del Plan Maestro y la capacitación (productos 2.2.1 y 2.2.2) | 2027-03-15 | 2027-04-30 |
| Obtener la no objeción del BID al informe de evaluación y al contrato negociado de la actualización del Plan Maestro y la capacitación (productos 2.2.1 y 2.2.2) | 2027-05-03 | 2027-05-11 |
| Firmar el contrato de consultoría para la actualización del Plan Maestro y la capacitación (productos 2.2.1 y 2.2.2) | 2027-05-12 | 2027-05-25 |
| Preparar los términos de referencia y la solicitud de expresiones de interés para la estrategia y capacitación BIM (productos 2.3.1 y 2.3.2) | 2026-11-30 | 2026-12-25 |
| Publicar la solicitud de expresiones de interés y conformar la lista corta nacional para la estrategia y capacitación BIM (productos 2.3.1 y 2.3.2) | 2026-12-28 | 2027-01-22 |
| Invitar a las firmas de la lista corta y recibir las propuestas para la estrategia y capacitación BIM (productos 2.3.1 y 2.3.2) | 2027-01-25 | 2027-02-19 |
| Evaluar las propuestas y negociar el contrato para la estrategia y capacitación BIM (productos 2.3.1 y 2.3.2) | 2027-02-22 | 2027-03-19 |
| Adjudicar y firmar el contrato de consultoría para la estrategia y capacitación BIM (productos 2.3.1 y 2.3.2) | 2027-03-22 | 2027-04-02 |
| Preparar los términos de referencia, la solicitud de expresiones de interés y la lista corta para el estudio de conectividad terrestre (producto 2.4) | 2026-11-30 | 2027-01-22 |
| Obtener la no objeción del BID a los términos de referencia y a la lista corta del estudio de conectividad terrestre (producto 2.4) | 2027-01-25 | 2027-01-29 |
| Invitar a las firmas de la lista corta y recibir las propuestas para el estudio de conectividad terrestre (producto 2.4) | 2027-02-01 | 2027-03-12 |
| Evaluar las propuestas y negociar el contrato para el estudio de conectividad terrestre (producto 2.4) | 2027-03-15 | 2027-04-30 |
| Obtener la no objeción del BID al informe de evaluación y al contrato negociado del estudio de conectividad terrestre (producto 2.4) | 2027-05-03 | 2027-05-11 |
| Firmar el contrato de consultoría para el estudio de conectividad terrestre (producto 2.4) | 2027-05-12 | 2027-05-25 |
| Preparar los términos de referencia y la solicitud de expresiones de interés para el estudio de diversificación de destinos (producto 2.5) | 2026-11-30 | 2026-12-25 |
| Publicar la solicitud de expresiones de interés y conformar la lista corta nacional para el estudio de diversificación de destinos (producto 2.5) | 2026-12-28 | 2027-01-22 |
| Invitar a las firmas de la lista corta y recibir las propuestas para el estudio de diversificación de destinos (producto 2.5) | 2027-01-25 | 2027-02-19 |
| Evaluar las propuestas y negociar el contrato para el estudio de diversificación de destinos (producto 2.5) | 2027-02-22 | 2027-03-19 |
| Adjudicar y firmar el contrato de consultoría para el estudio de diversificación de destinos (producto 2.5) | 2027-03-22 | 2027-04-02 |
| Preparar los términos de referencia y la solicitud de expresiones de interés para la auditoría y capacitación para la certificación EDGE (productos 2.6.1 y 2.6.2) | 2026-11-30 | 2026-12-25 |
| Publicar la solicitud de expresiones de interés y conformar la lista corta nacional para la auditoría y capacitación para la certificación EDGE (productos 2.6.1 y 2.6.2) | 2026-12-28 | 2027-01-22 |
| Invitar a las firmas de la lista corta y recibir las propuestas para la auditoría y capacitación para la certificación EDGE (productos 2.6.1 y 2.6.2) | 2027-01-25 | 2027-02-19 |
| Evaluar las propuestas y negociar el contrato para la auditoría y capacitación para la certificación EDGE (productos 2.6.1 y 2.6.2) | 2027-02-22 | 2027-03-19 |
| Adjudicar y firmar el contrato de consultoría para la auditoría y capacitación para la certificación EDGE (productos 2.6.1 y 2.6.2) | 2027-03-22 | 2027-04-02 |
| Preparar los términos de referencia y la solicitud de expresiones de interés para el estudio de separación de flujos (producto 2.7) | 2026-11-30 | 2026-12-25 |
| Publicar la solicitud de expresiones de interés y conformar la lista corta nacional para el estudio de separación de flujos (producto 2.7) | 2026-12-28 | 2027-01-22 |
| Invitar a las firmas de la lista corta y recibir las propuestas para el estudio de separación de flujos (producto 2.7) | 2027-01-25 | 2027-02-19 |
| Evaluar las propuestas y negociar el contrato para el estudio de separación de flujos (producto 2.7) | 2027-02-22 | 2027-03-19 |
| Adjudicar y firmar el contrato de consultoría para el estudio de separación de flujos (producto 2.7) | 2027-03-22 | 2027-04-02 |
| Preparar los términos de referencia y la solicitud de expresiones de interés para el estudio de movilidad interna (producto 2.8) | 2026-11-30 | 2026-12-25 |
| Publicar la solicitud de expresiones de interés y conformar la lista corta nacional para el estudio de movilidad interna (producto 2.8) | 2026-12-28 | 2027-01-22 |
| Invitar a las firmas de la lista corta y recibir las propuestas para el estudio de movilidad interna (producto 2.8) | 2027-01-25 | 2027-02-19 |
| Evaluar las propuestas y negociar el contrato para el estudio de movilidad interna (producto 2.8) | 2027-02-22 | 2027-03-19 |
| Adjudicar y firmar el contrato de consultoría para el estudio de movilidad interna (producto 2.8) | 2027-03-22 | 2027-04-02 |
| Preparar los términos de referencia y la solicitud de expresiones de interés para el programa de igualdad e inclusión (producto 2.9) | 2026-11-30 | 2026-12-25 |
| Publicar la solicitud de expresiones de interés y conformar la lista corta nacional para el programa de igualdad e inclusión (producto 2.9) | 2026-12-28 | 2027-01-22 |
| Invitar a las firmas de la lista corta y recibir las propuestas para el programa de igualdad e inclusión (producto 2.9) | 2027-01-25 | 2027-02-19 |
| Evaluar las propuestas y negociar el contrato para el programa de igualdad e inclusión (producto 2.9) | 2027-02-22 | 2027-03-19 |
| Adjudicar y firmar el contrato de consultoría para el programa de igualdad e inclusión (producto 2.9) | 2027-03-22 | 2027-04-02 |
| Preparar los términos de referencia y la convocatoria de los siete consultores clave de la UEP | 2026-02-02 | 2026-02-25 |
| Obtener la no objeción del BID a los términos de referencia de los siete consultores clave | 2026-02-26 | 2026-03-04 |
| Recibir los currículos, evaluar y seleccionar a los siete consultores clave | 2026-03-05 | 2026-04-01 |
| Obtener la no objeción del BID a la selección de los siete consultores clave | 2026-04-02 | 2026-04-08 |
| Firmar los contratos de los siete consultores clave de la UEP | 2026-04-09 | 2026-04-15 |
| Preparar los términos de referencia y la convocatoria del técnico de apoyo administrativo | 2026-07-15 | 2026-07-28 |
| Obtener la no objeción del BID a los términos de referencia del técnico de apoyo | 2026-07-29 | 2026-08-04 |
| Recibir los currículos, evaluar y seleccionar al técnico de apoyo | 2026-08-05 | 2026-09-01 |
| Obtener la no objeción del BID a la selección del técnico de apoyo | 2026-09-02 | 2026-09-08 |
| Firmar el contrato del técnico de apoyo administrativo | 2026-09-09 | 2026-09-15 |
| Preparar los términos de referencia y la lista corta de la auditoría externa año 1 | 2027-04-01 | 2027-04-07 |
| Obtener la no objeción del BID a los términos de referencia de la auditoría año 1 | 2027-04-08 | 2027-04-14 |
| Invitar a las firmas, recibir y evaluar las propuestas de la auditoría año 1 por menor costo | 2027-04-15 | 2027-04-21 |
| Obtener la no objeción del BID a la recomendación de adjudicación de la auditoría año 1 | 2027-04-22 | 2027-04-28 |
| Firmar el contrato de la auditoría externa año 1 | 2027-04-29 | 2027-05-05 |
| Preparar los términos de referencia y la lista corta de la auditoría externa año 2 | 2027-09-13 | 2027-10-22 |
| Obtener la no objeción del BID a los términos de referencia de la auditoría año 2 | 2027-10-25 | 2027-10-29 |
| Invitar a las firmas, recibir y evaluar las propuestas de la auditoría año 2 por menor costo | 2027-11-01 | 2027-12-03 |
| Obtener la no objeción del BID a la recomendación de adjudicación de la auditoría año 2 | 2027-12-06 | 2027-12-10 |
| Firmar el contrato de la auditoría externa año 2 | 2027-12-13 | 2027-12-22 |
| Preparar los términos de referencia y la lista corta de la auditoría externa año 3 | 2028-09-12 | 2028-10-23 |
| Obtener la no objeción del BID a los términos de referencia de la auditoría año 3 | 2028-10-24 | 2028-10-30 |
| Invitar a las firmas, recibir y evaluar las propuestas de la auditoría año 3 por menor costo | 2028-10-31 | 2028-12-04 |
| Obtener la no objeción del BID a la recomendación de adjudicación de la auditoría año 3 | 2028-12-05 | 2028-12-11 |
| Firmar el contrato de la auditoría externa año 3 | 2028-12-12 | 2028-12-21 |
| Preparar los términos de referencia y la lista corta de la auditoría externa año 4 | 2029-04-16 | 2029-05-25 |

| Task | Start | Finish |
| --- | --- | --- |
| Obtener la no objeción del BID a los términos de referencia de la auditoría año 4 | 2029-05-28 | 2029-06-01 |
| Invitar a las firmas, recibir y evaluar las propuestas de la auditoría año 4 por menor costo | 2029-06-04 | 2029-07-06 |
| Obtener la no objeción del BID a la recomendación de adjudicación de la auditoría año 4 | 2029-07-09 | 2029-07-13 |
| Firmar el contrato de la auditoría externa año 4 | 2029-07-16 | 2029-07-25 |
| Preparar los términos de referencia y la solicitud de expresiones de interés de la evaluación de medio término | 2027-11-08 | 2027-11-30 |
| Publicar la solicitud de expresiones de interés y conformar la lista corta nacional de la evaluación de medio término | 2027-12-01 | 2027-12-23 |
| Invitar a las firmas de la lista corta y recibir las propuestas de la evaluación de medio término | 2027-12-24 | 2028-01-20 |
| Evaluar las propuestas y negociar el contrato de la evaluación de medio término | 2028-01-21 | 2028-03-07 |
| Adjudicar y firmar el contrato de la evaluación de medio término | 2028-03-08 | 2028-03-21 |
| Preparar los términos de referencia y la solicitud de expresiones de interés de la evaluación final | 2028-12-25 | 2029-01-16 |
| Publicar la solicitud de expresiones de interés y conformar la lista corta nacional de la evaluación final | 2029-01-17 | 2029-02-08 |
| Invitar a las firmas de la lista corta y recibir las propuestas de la evaluación final | 2029-02-09 | 2029-03-08 |
| Evaluar las propuestas y negociar el contrato de la evaluación final | 2029-03-09 | 2029-04-25 |
| Adjudicar y firmar el contrato de la evaluación final | 2029-04-26 | 2029-05-09 |
| Solicitar el primer desembolso por Anticipo de Fondos con las condiciones previas cumplidas | 2026-07-20 | 2026-07-31 |
| Elaborar y presentar al BID el informe semestral de progreso del semestre S2 de 2026 con la solicitud de desembolso | 2027-01-01 | 2027-01-27 |
| Elaborar y presentar al BID el informe semestral de progreso del semestre S1 de 2027 con la solicitud de desembolso | 2027-07-01 | 2027-07-27 |
| Elaborar y presentar al BID el informe semestral de progreso del semestre S2 de 2027 con la solicitud de desembolso | 2028-01-03 | 2028-01-27 |
| Elaborar y presentar al BID el informe semestral de progreso del semestre S1 de 2028 con la solicitud de desembolso | 2028-07-03 | 2028-07-27 |
| Elaborar y presentar al BID el informe semestral de progreso del semestre S2 de 2028 con la solicitud de desembolso | 2029-01-01 | 2029-01-25 |
| Elaborar y presentar al BID el informe semestral de progreso del semestre S1 de 2029 con la solicitud de desembolso | 2029-07-02 | 2029-07-26 |
| Justificar los gastos y tramitar las solicitudes de desembolso del año 2027 | 2027-01-01 | 2028-01-27 |
| Justificar los gastos y tramitar las solicitudes de desembolso del año 2028 | 2028-01-03 | 2029-01-25 |
| Justificar los gastos y tramitar las solicitudes de desembolso del año 2029 | 2029-01-01 | 2029-08-22 |
| Preparar los estados financieros del programa del ejercicio 2026 | 2027-01-01 | 2027-01-28 |
| Auditar los estados financieros del programa del ejercicio 2026 | 2027-05-06 | 2027-06-16 |
| Presentar al BID los estados financieros auditados del ejercicio 2026 | 2027-06-17 | 2027-06-23 |
| Preparar los estados financieros del programa del ejercicio 2027 | 2028-01-03 | 2028-01-28 |
| Auditar los estados financieros del programa del ejercicio 2027 | 2028-01-31 | 2028-03-10 |
| Presentar al BID los estados financieros auditados del ejercicio 2027 | 2028-03-13 | 2028-03-17 |
| Preparar los estados financieros del programa del ejercicio 2028 | 2029-01-01 | 2029-01-26 |
| Auditar los estados financieros del programa del ejercicio 2028 | 2029-01-29 | 2029-03-09 |
| Presentar al BID los estados financieros auditados del ejercicio 2028 | 2029-03-12 | 2029-03-16 |
| Proyectar en el POA 2028 la fecha del hito de medio término (50% desembolsado o 50% del plazo de desembolsos) | 2027-11-01 | 2027-11-05 |
| Ejecutar la evaluación de medio término: avance físico y financiero y medición temprana de resultados | 2028-03-22 | 2028-07-18 |
| Revisar el informe de evaluación de medio término y presentarlo al BID | 2028-07-19 | 2028-08-01 |
| Ejecutar la evaluación final de efectividad sin atribución empírica | 2029-05-10 | 2029-11-01 |
| Revisar el informe de evaluación final y presentarlo al BID | 2029-11-02 | 2029-11-15 |
| Liquidar los contratos de obra, supervisión y consultoría | 2029-07-26 | 2029-08-22 |
| Justificar los anticipos pendientes y tramitar el último desembolso | 2029-11-16 | 2029-12-13 |
| Auditar y presentar al BID los estados financieros finales del programa | 2029-12-14 | 2030-02-11 |
| Preparar y entregar al BID los insumos de la UEP para el informe de terminación del programa, con las lecciones aprendidas | 2030-02-12 | 2030-03-18 |
| Devolver los saldos no justificados al BID y cerrar la cuenta especial | 2030-02-12 | 2030-03-04 |
| Cerrar el expediente administrativo del programa y archivar los documentos | 2030-03-19 | 2030-04-01 |

## Version 2 (saved 2026-10-31)

Note of the change: Costear la curva S por actividad, rehacer la matriz por contrato y corregir el cronograma

Last finish stays 2030-04-01.

Added:

| Task | Start | Finish |
| --- | --- | --- |
| Elaborar el diseño final de la fachada sur de la terminal (tres salas de espera y sus puentes de abordaje) en el modelo BIM | 2027-05-10 | 2027-08-03 |
| Revisar con la supervisión el diseño de la fachada sur y validar su integración con el diseño de la fachada norte | 2027-08-04 | 2027-08-25 |
| Aprobar el diseño de la fachada sur de la terminal | 2027-08-26 | 2027-09-01 |
| Instalar el transporte vertical accesible y la señalética de los recorridos accesibles y habilitar los espacios de movilidad del cuidado de la terminal | 2028-07-28 | 2028-10-23 |
| Instalar y poner en marcha las medidas de eficiencia EDGE de la terminal (iluminación, griferías y accesorios de bajo consumo, aislamiento y control solar) | 2028-06-20 | 2028-08-22 |
| Trasladar al personal y los vehículos del SSEI al edificio nuevo ya equipado | 2028-01-28 | 2028-02-09 |
| Suministrar e instalar el equipamiento del edificio nuevo del SSEI (equipos de rescate y de comunicaciones, mobiliario y talleres) | 2027-11-29 | 2028-01-10 |
| Probar el equipamiento del SSEI, capacitar al personal en su uso y entregar los manuales | 2028-01-11 | 2028-01-27 |
| Incorporar al Especialista en ingeniería aeroportuaria, al Especialista financiero y al Especialista socioambiental | 2026-05-04 | 2026-05-08 |
| Administrar el programa desde la Unidad Ejecutora | 2026-04-16 | 2030-03-18 |
| Publicar el Aviso General de Adquisiciones del programa en el portal del BID | 2026-04-29 | 2026-05-05 |
| Publicar la solicitud de expresiones de interés de la supervisión de la terminal y conformar la lista corta | 2026-09-22 | 2026-10-19 |
| Publicar la solicitud de expresiones de interés y conformar la lista corta internacional para la estrategia y capacitación BIM (productos 2.3.1 y 2.3.2) | 2026-12-28 | 2027-01-22 |
| Obtener la no objeción del BID a los términos de referencia y a la lista corta para la estrategia y capacitación BIM (productos 2.3.1 y 2.3.2) | 2027-01-25 | 2027-01-29 |
| Obtener la no objeción del BID al informe de evaluación y al contrato negociado para la estrategia y capacitación BIM (productos 2.3.1 y 2.3.2) | 2027-05-03 | 2027-05-11 |
| Obtener la no objeción del BID a los términos de referencia y a la lista corta para el estudio de diversificación de destinos (producto 2.5) | 2027-01-25 | 2027-01-29 |
| Obtener la no objeción del BID al informe de evaluación y al contrato negociado para el estudio de diversificación de destinos (producto 2.5) | 2027-03-29 | 2027-04-06 |
| Obtener la no objeción del BID a los términos de referencia y a la lista corta para la auditoría y capacitación para la certificación EDGE (productos 2.6.1 y 2.6.2) | 2027-01-25 | 2027-01-29 |
| Obtener la no objeción del BID al informe de evaluación y al contrato negociado para la auditoría y capacitación para la certificación EDGE (productos 2.6.1 y 2.6.2) | 2027-03-29 | 2027-04-06 |
| Obtener la no objeción del BID a los términos de referencia y a la lista corta para el estudio de separación de flujos (producto 2.7) | 2027-01-25 | 2027-01-29 |
| Obtener la no objeción del BID al informe de evaluación y al contrato negociado para el estudio de separación de flujos (producto 2.7) | 2027-03-29 | 2027-04-06 |
| Obtener la no objeción del BID a los términos de referencia y a la lista corta para el estudio de movilidad interna (producto 2.8) | 2027-01-25 | 2027-01-29 |
| Obtener la no objeción del BID al informe de evaluación y al contrato negociado para el estudio de movilidad interna (producto 2.8) | 2027-03-29 | 2027-04-06 |
| Obtener la no objeción del BID a los términos de referencia y a la lista corta para el programa de igualdad e inclusión (producto 2.9) | 2027-01-25 | 2027-01-29 |
| Obtener la no objeción del BID al informe de evaluación y al contrato negociado para el programa de igualdad e inclusión (producto 2.9) | 2027-03-29 | 2027-04-06 |
| Obtener la no objeción del BID a los términos de referencia y a la lista corta de la evaluación de medio término | 2027-07-30 | 2027-08-05 |
| Obtener la no objeción del BID al informe de evaluación y al contrato negociado de la evaluación de medio término | 2027-10-08 | 2027-10-18 |
| Obtener la no objeción del BID a los términos de referencia y a la lista corta de la evaluación final | 2029-02-05 | 2029-02-09 |
| Obtener la no objeción del BID al informe de evaluación y al contrato negociado de la evaluación final | 2029-04-17 | 2029-04-25 |
| Preparar los términos de referencia y la convocatoria de los consultores individuales del lote 1 de la plantilla ampliada de la UEP (diez puestos, agosto de 2026) | 2026-08-14 | 2026-08-27 |
| Obtener la no objeción del BID a los términos de referencia del lote 1 de la plantilla ampliada de la UEP (diez puestos, agosto de 2026) | 2026-08-28 | 2026-09-03 |
| Recibir los currículos, comparar las calificaciones y seleccionar a los consultores del lote 1 de la plantilla ampliada de la UEP (diez puestos, agosto de 2026) | 2026-09-04 | 2026-10-01 |
| Obtener la no objeción del BID a la selección de los consultores del lote 1 de la plantilla ampliada de la UEP (diez puestos, agosto de 2026) | 2026-10-02 | 2026-10-08 |
| Firmar los contratos de los consultores individuales del lote 1 de la plantilla ampliada de la UEP (diez puestos, agosto de 2026) | 2026-10-09 | 2026-10-15 |
| Preparar los términos de referencia y la convocatoria de los consultores individuales del lote 2 de la plantilla ampliada de la UEP (pavimentos aeroportuarios, septiembre de 2026) | 2026-09-04 | 2026-09-17 |
| Obtener la no objeción del BID a los términos de referencia del lote 2 de la plantilla ampliada de la UEP (pavimentos aeroportuarios, septiembre de 2026) | 2026-09-18 | 2026-09-24 |
| Recibir los currículos, comparar las calificaciones y seleccionar a los consultores del lote 2 de la plantilla ampliada de la UEP (pavimentos aeroportuarios, septiembre de 2026) | 2026-09-25 | 2026-10-22 |
| Obtener la no objeción del BID a la selección de los consultores del lote 2 de la plantilla ampliada de la UEP (pavimentos aeroportuarios, septiembre de 2026) | 2026-10-23 | 2026-10-29 |
| Firmar los contratos de los consultores individuales del lote 2 de la plantilla ampliada de la UEP (pavimentos aeroportuarios, septiembre de 2026) | 2026-10-30 | 2026-11-05 |
| Preparar los términos de referencia y la convocatoria de los consultores individuales del lote 3 de la plantilla ampliada de la UEP (analista social, septiembre de 2026) | 2026-09-16 | 2026-09-29 |
| Obtener la no objeción del BID a los términos de referencia del lote 3 de la plantilla ampliada de la UEP (analista social, septiembre de 2026) | 2026-09-30 | 2026-10-06 |
| Recibir los currículos, comparar las calificaciones y seleccionar a los consultores del lote 3 de la plantilla ampliada de la UEP (analista social, septiembre de 2026) | 2026-10-07 | 2026-11-03 |
| Obtener la no objeción del BID a la selección de los consultores del lote 3 de la plantilla ampliada de la UEP (analista social, septiembre de 2026) | 2026-11-04 | 2026-11-10 |
| Firmar los contratos de los consultores individuales del lote 3 de la plantilla ampliada de la UEP (analista social, septiembre de 2026) | 2026-11-11 | 2026-11-17 |
| Preparar los términos de referencia y la convocatoria de los consultores individuales del lote 4 de la plantilla ampliada de la UEP (tres puestos, enero de 2027) | 2027-01-14 | 2027-01-27 |
| Obtener la no objeción del BID a los términos de referencia del lote 4 de la plantilla ampliada de la UEP (tres puestos, enero de 2027) | 2027-01-28 | 2027-02-03 |
| Recibir los currículos, comparar las calificaciones y seleccionar a los consultores del lote 4 de la plantilla ampliada de la UEP (tres puestos, enero de 2027) | 2027-02-04 | 2027-03-03 |
| Obtener la no objeción del BID a la selección de los consultores del lote 4 de la plantilla ampliada de la UEP (tres puestos, enero de 2027) | 2027-03-04 | 2027-03-10 |
| Firmar los contratos de los consultores individuales del lote 4 de la plantilla ampliada de la UEP (tres puestos, enero de 2027) | 2027-03-11 | 2027-03-17 |
| Preparar los términos de referencia y la convocatoria de los consultores individuales del lote 5 de la plantilla ampliada de la UEP (cinco puestos, marzo de 2027) | 2027-03-23 | 2027-04-05 |
| Obtener la no objeción del BID a los términos de referencia del lote 5 de la plantilla ampliada de la UEP (cinco puestos, marzo de 2027) | 2027-04-06 | 2027-04-12 |
| Recibir los currículos, comparar las calificaciones y seleccionar a los consultores del lote 5 de la plantilla ampliada de la UEP (cinco puestos, marzo de 2027) | 2027-04-13 | 2027-05-10 |
| Obtener la no objeción del BID a la selección de los consultores del lote 5 de la plantilla ampliada de la UEP (cinco puestos, marzo de 2027) | 2027-05-11 | 2027-05-17 |
| Firmar los contratos de los consultores individuales del lote 5 de la plantilla ampliada de la UEP (cinco puestos, marzo de 2027) | 2027-05-18 | 2027-05-24 |
| Preparar los términos de referencia y la convocatoria de los consultores individuales del lote 6 de la plantilla ampliada de la UEP (Administrador 4 de Proyectos, agosto de 2027) | 2027-08-30 | 2027-09-10 |
| Obtener la no objeción del BID a los términos de referencia del lote 6 de la plantilla ampliada de la UEP (Administrador 4 de Proyectos, agosto de 2027) | 2027-09-13 | 2027-09-17 |
| Recibir los currículos, comparar las calificaciones y seleccionar a los consultores del lote 6 de la plantilla ampliada de la UEP (Administrador 4 de Proyectos, agosto de 2027) | 2027-09-20 | 2027-10-15 |
| Obtener la no objeción del BID a la selección de los consultores del lote 6 de la plantilla ampliada de la UEP (Administrador 4 de Proyectos, agosto de 2027) | 2027-10-18 | 2027-10-22 |
| Firmar los contratos de los consultores individuales del lote 6 de la plantilla ampliada de la UEP (Administrador 4 de Proyectos, agosto de 2027) | 2027-10-25 | 2027-10-29 |
| Proyectar con los contratos de obra firmados la fecha del hito de medio término (50% del tiempo de ejecución planificado o 50% de los recursos desembolsados, lo que ocurra primero) | 2027-06-11 | 2027-06-17 |

Removed: Equipar el edificio nuevo y trasladar al personal y los vehículos del SSEI; Incorporar al Especialista técnico, al Especialista financiero y al Especialista socioambiental; Preparar los términos de referencia, la solicitud de expresiones de interés y la lista corta de la supervisión de la terminal; Publicar la solicitud de expresiones de interés y conformar la lista corta nacional para la estrategia y capacitación BIM (productos 2.3.1 y 2.3.2); Proyectar en el POA 2028 la fecha del hito de medio término (50% desembolsado o 50% del plazo de desembolsos)

Changed:

| Task | Start | Finish |
| --- | --- | --- |
| Elaborar y aprobar los planos de taller de los seis puentes de abordaje | 2027-08-20 → 2027-09-02 (+13d) | 2027-10-18 → 2027-10-29 (+11d) |
| Fabricar y entregar en sitio los seis puentes de abordaje | 2027-10-19 → 2027-11-01 (+13d) | 2028-04-19 → 2028-05-02 (+13d) |
| Demoler el SSEI antiguo y despejar la huella de la plataforma remota | 2028-02-16 → 2028-02-25 (+9d) | 2028-03-15 → 2028-03-24 (+9d) |
| Ejecutar la terracería y la capa de suelo cemento de 30 cm de la plataforma remota | 2028-03-16 → 2028-03-27 (+11d) | 2028-05-12 → 2028-05-23 (+11d) |
| Modificar los canales existentes y construir el drenaje y las obras de paso de la plataforma remota | 2028-04-13 → 2028-04-24 (+11d) | 2028-05-25 → 2028-06-05 (+11d) |
| Colar el pavimento de concreto de 34 cm de la plataforma remota y sellar las juntas | 2028-05-26 → 2028-06-06 (+11d) | 2028-08-15 → 2028-08-24 (+9d) |
| Construir el pavimento asfáltico de los márgenes y las zonas de apoyo terrestre de la plataforma remota | 2028-07-18 → 2028-07-27 (+9d) | 2028-08-22 → 2028-08-31 (+9d) |
| Instalar las luces de borde y las torres de iluminación de la plataforma remota | 2028-07-11 → 2028-07-20 (+9d) | 2028-08-29 → 2028-09-07 (+9d) |
| Realizar las pruebas de tiempo de respuesta y declarar en operación el SSEI nuevo | 2028-02-01 → 2028-02-10 (+9d) | 2028-02-15 → 2028-02-24 (+9d) |
| Elaborar el plan de trabajo y el informe inicial de la estrategia BIM | 2027-04-05 → 2027-05-26 (+51d) | 2027-04-19 → 2027-06-09 (+51d) |
| Diagnosticar la madurez BIM de CEPA, sus procesos de diseño y sus herramientas | 2027-04-20 → 2027-06-10 (+51d) | 2027-05-18 → 2027-07-08 (+51d) |
| Formular la estrategia BIM (usos, roles, entorno común de datos y requisitos de información) y redactar el borrador | 2027-05-19 → 2027-07-09 (+51d) | 2027-06-29 → 2027-08-19 (+51d) |
| Revisar el borrador de la estrategia BIM y consolidar las observaciones de CEPA | 2027-06-30 → 2027-08-20 (+51d) | 2027-07-14 → 2027-09-03 (+51d) |
| Incorporar las observaciones y entregar la versión final de la estrategia BIM | 2027-07-15 → 2027-09-06 (+53d) | 2027-07-26 → 2027-09-15 (+51d) |
| Aprobar la estrategia BIM final | 2027-07-27 → 2027-09-16 (+51d) | 2027-08-04 → 2027-09-24 (+51d) |
| Preparar el programa y los materiales de la capacitación en BIM | 2027-07-27 → 2027-09-16 (+51d) | 2027-08-16 → 2027-10-06 (+51d) |
| Impartir los cursos de BIM al personal de ingeniería de CEPA | 2027-08-17 → 2027-10-07 (+51d) | 2027-10-05 → 2027-11-25 (+51d) |
| Evaluar a los participantes en BIM | 2027-10-06 → 2027-11-26 (+51d) | 2027-10-14 → 2027-12-06 (+53d) |
| Entregar los materiales y el registro de la capacitación en BIM | 2027-10-15 → 2027-12-07 (+53d) | 2027-10-25 → 2027-12-15 (+51d) |
| Elaborar el plan de trabajo y el informe inicial del estudio de diversificación de destinos | 2027-04-05 → 2027-04-21 (+16d) | 2027-04-19 → 2027-05-05 (+16d) |
| Diagnosticar el mercado actual del AIES (tráfico, aerolíneas, rutas y zona de influencia) | 2027-04-20 → 2027-05-06 (+16d) | 2027-06-07 → 2027-06-23 (+16d) |
| Analizar los mercados de origen y destino y las aerolíneas potenciales, priorizarlos y redactar el borrador del estudio | 2027-06-08 → 2027-06-24 (+16d) | 2027-08-10 → 2027-08-26 (+16d) |
| Revisar el borrador del estudio de diversificación y consolidar las observaciones de CEPA | 2027-08-11 → 2027-08-27 (+16d) | 2027-08-27 → 2027-09-14 (+18d) |
| Incorporar las observaciones y entregar el informe final del estudio de diversificación | 2027-08-30 → 2027-09-15 (+16d) | 2027-09-13 → 2027-09-29 (+16d) |
| Aprobar el informe final del estudio de diversificación | 2027-09-14 → 2027-09-30 (+16d) | 2027-09-23 → 2027-10-11 (+18d) |
| Registrar los proyectos de terminal y estacionamiento en EDGE y elaborar la autoevaluación | 2027-04-05 → 2027-04-21 (+16d) | 2027-05-03 → 2027-05-19 (+16d) |
| Realizar la auditoría de diseño y obtener el certificado preliminar EDGE | 2027-05-04 → 2027-05-20 (+16d) | 2027-06-22 → 2027-07-08 (+16d) |
| Acompañar a CEPA y a los contratistas para conservar las medidas EDGE durante la construcción | 2027-06-23 → 2027-07-09 (+16d) |  |
| Preparar el programa y los materiales de la capacitación en EDGE | 2027-06-23 → 2027-07-09 (+16d) | 2027-07-07 → 2027-07-23 (+16d) |
| Elaborar el plan de trabajo y el informe inicial del estudio de separación de flujos | 2027-04-05 → 2027-04-21 (+16d) | 2027-04-19 → 2027-05-05 (+16d) |
| Diagnosticar los flujos de llegadas y salidas de la terminal antigua mediante levantamiento y observación | 2027-04-20 → 2027-05-06 (+16d) | 2027-05-18 → 2027-06-03 (+16d) |
| Identificar y priorizar las intervenciones de separación de flujos y redactar el borrador del estudio | 2027-05-19 → 2027-06-04 (+16d) | 2027-06-29 → 2027-07-15 (+16d) |
| Revisar el borrador del estudio de separación de flujos y consolidar las observaciones de CEPA | 2027-06-30 → 2027-07-16 (+16d) | 2027-07-14 → 2027-07-30 (+16d) |
| Incorporar las observaciones y entregar el informe final del estudio de separación de flujos | 2027-07-15 → 2027-08-02 (+18d) | 2027-07-26 → 2027-08-11 (+16d) |
| Aprobar el informe final del estudio de separación de flujos | 2027-07-27 → 2027-08-12 (+16d) | 2027-08-04 → 2027-08-20 (+16d) |
| Elaborar el plan de trabajo y el informe inicial del estudio de movilidad interna | 2027-04-05 → 2027-04-21 (+16d) | 2027-04-19 → 2027-05-05 (+16d) |
| Diagnosticar el tráfico de las vías internas con aforos en horas pico y en el dejar y recoger pasajeros | 2027-04-20 → 2027-05-06 (+16d) | 2027-05-31 → 2027-06-16 (+16d) |
| Analizar los puntos de conflicto, definir las medidas y redactar el borrador del estudio | 2027-06-01 → 2027-06-17 (+16d) | 2027-07-20 → 2027-08-05 (+16d) |
| Revisar el borrador del estudio de movilidad interna y consolidar las observaciones de CEPA | 2027-07-21 → 2027-08-06 (+16d) | 2027-08-04 → 2027-08-20 (+16d) |
| Incorporar las observaciones y entregar el informe final del estudio de movilidad interna | 2027-08-05 → 2027-08-23 (+18d) | 2027-08-16 → 2027-09-01 (+16d) |
| Aprobar el informe final del estudio de movilidad interna | 2027-08-17 → 2027-09-02 (+16d) | 2027-08-25 → 2027-09-10 (+16d) |
| Elaborar el diagnóstico de necesidades, el programa y los materiales de capacitación en igualdad e inclusión | 2027-04-05 → 2027-04-21 (+16d) | 2027-05-14 → 2027-06-01 (+18d) |
| Impartir la capacitación a la primera cohorte de 100 funcionarios y evaluarla | 2027-05-17 → 2027-06-02 (+16d) | 2027-07-02 → 2027-07-20 (+18d) |
| Impartir la capacitación a la segunda cohorte de 100 funcionarios y evaluarla | 2028-05-15 → 2028-05-31 (+16d) | 2028-06-30 → 2028-07-18 (+18d) |
| Impartir la capacitación a la tercera cohorte de 100 funcionarios y evaluarla | 2029-05-14 → 2029-05-30 (+16d) | 2029-06-29 → 2029-07-17 (+18d) |
| Emitir las constancias de los 300 funcionarios aprobados y entregar el informe final del programa | 2029-07-02 → 2029-07-18 (+16d) | 2029-07-16 → 2029-08-01 (+16d) |
| Aprobar el informe final y registrar el indicador T2 en el informe semestral | 2029-07-17 → 2029-08-02 (+16d) | 2029-07-25 → 2029-08-10 (+16d) |
| Obtener la no objeción del BID a los términos de referencia y a la lista corta de la supervisión de la terminal | 2026-12-21 → 2026-10-20 (-62d) | 2026-12-25 → 2026-10-26 (-60d) |
| Invitar a las firmas de la lista corta y recibir las propuestas de la supervisión de la terminal | 2026-12-28 → 2026-10-27 (-62d) | 2027-02-05 → 2026-12-07 (-60d) |
| Evaluar las propuestas técnicas y económicas y negociar el contrato de la supervisión de la terminal | 2027-02-08 → 2026-12-08 (-62d) |  |
| Invitar a las firmas de la lista corta y recibir las propuestas para la estrategia y capacitación BIM (productos 2.3.1 y 2.3.2) | 2027-01-25 → 2027-02-01 (+7d) | 2027-02-19 → 2027-03-12 (+21d) |
| Evaluar las propuestas y negociar el contrato para la estrategia y capacitación BIM (productos 2.3.1 y 2.3.2) | 2027-02-22 → 2027-03-15 (+21d) | 2027-03-19 → 2027-04-30 (+42d) |
| Adjudicar y firmar el contrato de consultoría para la estrategia y capacitación BIM (productos 2.3.1 y 2.3.2) | 2027-03-22 → 2027-05-12 (+51d) | 2027-04-02 → 2027-05-25 (+53d) |
| Invitar a las firmas de la lista corta y recibir las propuestas para el estudio de diversificación de destinos (producto 2.5) | 2027-01-25 → 2027-02-01 (+7d) | 2027-02-19 → 2027-02-26 (+7d) |
| Evaluar las propuestas y negociar el contrato para el estudio de diversificación de destinos (producto 2.5) | 2027-02-22 → 2027-03-01 (+7d) | 2027-03-19 → 2027-03-26 (+7d) |
| Adjudicar y firmar el contrato de consultoría para el estudio de diversificación de destinos (producto 2.5) | 2027-03-22 → 2027-04-07 (+16d) | 2027-04-02 → 2027-04-20 (+18d) |
| Invitar a las firmas de la lista corta y recibir las propuestas para la auditoría y capacitación para la certificación EDGE (productos 2.6.1 y 2.6.2) | 2027-01-25 → 2027-02-01 (+7d) | 2027-02-19 → 2027-02-26 (+7d) |
| Evaluar las propuestas y negociar el contrato para la auditoría y capacitación para la certificación EDGE (productos 2.6.1 y 2.6.2) | 2027-02-22 → 2027-03-01 (+7d) | 2027-03-19 → 2027-03-26 (+7d) |
| Adjudicar y firmar el contrato de consultoría para la auditoría y capacitación para la certificación EDGE (productos 2.6.1 y 2.6.2) | 2027-03-22 → 2027-04-07 (+16d) | 2027-04-02 → 2027-04-20 (+18d) |
| Invitar a las firmas de la lista corta y recibir las propuestas para el estudio de separación de flujos (producto 2.7) | 2027-01-25 → 2027-02-01 (+7d) | 2027-02-19 → 2027-02-26 (+7d) |
| Evaluar las propuestas y negociar el contrato para el estudio de separación de flujos (producto 2.7) | 2027-02-22 → 2027-03-01 (+7d) | 2027-03-19 → 2027-03-26 (+7d) |
| Adjudicar y firmar el contrato de consultoría para el estudio de separación de flujos (producto 2.7) | 2027-03-22 → 2027-04-07 (+16d) | 2027-04-02 → 2027-04-20 (+18d) |
| Invitar a las firmas de la lista corta y recibir las propuestas para el estudio de movilidad interna (producto 2.8) | 2027-01-25 → 2027-02-01 (+7d) | 2027-02-19 → 2027-02-26 (+7d) |
| Evaluar las propuestas y negociar el contrato para el estudio de movilidad interna (producto 2.8) | 2027-02-22 → 2027-03-01 (+7d) | 2027-03-19 → 2027-03-26 (+7d) |
| Adjudicar y firmar el contrato de consultoría para el estudio de movilidad interna (producto 2.8) | 2027-03-22 → 2027-04-07 (+16d) | 2027-04-02 → 2027-04-20 (+18d) |
| Invitar a las firmas de la lista corta y recibir las propuestas para el programa de igualdad e inclusión (producto 2.9) | 2027-01-25 → 2027-02-01 (+7d) | 2027-02-19 → 2027-02-26 (+7d) |
| Evaluar las propuestas y negociar el contrato para el programa de igualdad e inclusión (producto 2.9) | 2027-02-22 → 2027-03-01 (+7d) | 2027-03-19 → 2027-03-26 (+7d) |
| Adjudicar y firmar el contrato de consultoría para el programa de igualdad e inclusión (producto 2.9) | 2027-03-22 → 2027-04-07 (+16d) | 2027-04-02 → 2027-04-20 (+18d) |
| Preparar los términos de referencia y la solicitud de expresiones de interés de la evaluación de medio término | 2027-11-08 → 2027-06-18 (-143d) | 2027-11-30 → 2027-07-08 (-145d) |
| Publicar la solicitud de expresiones de interés y conformar la lista corta nacional de la evaluación de medio término | 2027-12-01 → 2027-07-09 (-145d) | 2027-12-23 → 2027-07-29 (-147d) |

| Task | Start | Finish |
| --- | --- | --- |
| Invitar a las firmas de la lista corta y recibir las propuestas de la evaluación de medio término | 2027-12-24 → 2027-08-06 (-140d) | 2028-01-20 → 2027-08-30 (-143d) |
| Evaluar las propuestas y negociar el contrato de la evaluación de medio término | 2028-01-21 → 2027-08-31 (-143d) | 2028-03-07 → 2027-10-07 (-152d) |
| Adjudicar y firmar el contrato de la evaluación de medio término | 2028-03-08 → 2027-10-19 (-141d) | 2028-03-21 → 2027-11-01 (-141d) |
| Preparar los términos de referencia y la solicitud de expresiones de interés de la evaluación final |  | 2029-01-16 → 2029-01-12 (-4d) |
| Publicar la solicitud de expresiones de interés y conformar la lista corta nacional de la evaluación final | 2029-01-17 → 2029-01-15 (-2d) | 2029-02-08 → 2029-02-02 (-6d) |
| Invitar a las firmas de la lista corta y recibir las propuestas de la evaluación final | 2029-02-09 → 2029-02-12 (+3d) | 2029-03-08 → 2029-03-06 (-2d) |
| Evaluar las propuestas y negociar el contrato de la evaluación final | 2029-03-09 → 2029-03-07 (-2d) | 2029-04-25 → 2029-04-16 (-9d) |
| Justificar los gastos y tramitar las solicitudes de desembolso del año 2029 |  | 2029-08-22 → 2029-09-07 (+16d) |
| Ejecutar la evaluación de medio término: avance físico y financiero y medición temprana de resultados | 2028-03-22 → 2027-11-02 (-141d) | 2028-07-18 → 2028-02-28 (-141d) |
| Revisar el informe de evaluación de medio término y presentarlo al BID | 2028-07-19 → 2028-02-29 (-141d) | 2028-08-01 → 2028-03-13 (-141d) |
| Liquidar los contratos de obra, supervisión y consultoría | 2029-07-26 → 2029-08-13 (+18d) | 2029-08-22 → 2029-09-07 (+16d) |
