How a schedule from an exported table changed from version to version. A marks actual dates.

## Version 1 (saved 2026-10-31)

Note of the change: Merge branch 'main' of https://github.com/RoderickGrc/proyecto-api-aeropuerto

| Task | Start | Finish |
| --- | --- | --- |
| Diseños de la terminal revisados y aprobados | 2026-05-18 | 2026-09-28 |
| Diseños de plataformas y calle Foxtrot revisados y aprobados | 2026-05-18 | 2026-11-10 |
| Diseños del estacionamiento y del sistema solar revisados y aprobados | 2026-05-18 | 2026-08-24 |
| Diseños del SSEI revisados y aprobados | 2026-07-01 | 2026-10-06 |
| Estructura y envolvente de la terminal construidas | 2027-05-27 | 2028-06-19 |
| Salas de espera, circulación y áreas de apoyo terminadas | 2028-03-10 | 2028-10-23 |
| Instalaciones eléctricas, hidráulicas, climatización y contra incendio recibidas | 2028-02-25 | 2028-11-20 |
| Puentes de abordaje, mobiliario y equipos instalados | 2027-08-20 | 2029-03-16 |
| Accesibilidad universal, movilidad del cuidado y criterios de sostenibilidad incorporados | 2026-08-13 | 2028-11-27 |
| Plataforma de posiciones de contacto construida | 2027-08-11 | 2028-10-30 |
| Plataforma de posiciones remotas construida | 2028-02-16 | 2028-08-22 |
| Señalización, luces y torres de iluminación de plataforma instaladas | 2028-07-11 | 2029-01-16 |
| Pavimento y hombros de la calle Foxtrot construidos | 2028-04-05 | 2028-08-28 |
| Señalización y balizamiento de la calle Foxtrot instalados | 2028-08-29 | 2028-11-10 |
| Edificio de estacionamiento construido | 2027-02-16 | 2028-04-04 |
| Sistemas de acceso, tráfico y áreas de alquiler instalados | 2027-11-24 | 2028-03-09 |
| Sistema de generación solar instalado | 2027-05-11 | 2028-05-31 |
| Edificio del SSEI y vías de acceso construidos | 2027-06-18 | 2027-12-27 |
| SSEI en funcionamiento en la nueva ubicación | 2027-08-27 | 2028-02-15 |
| Supervisión de la terminal y del estacionamiento ejecutada | 2027-02-04 | 2029-07-27 |
| Supervisión de plataformas, calle Foxtrot y SSEI ejecutada | 2027-06-11 | 2029-04-25 |
| PGAS de construcción implementado | 2027-01-28 | 2029-05-08 |
| Planos de obra ejecutada y actas de recepción aprobados | 2027-12-28 | 2029-07-05 |
| Plan estratégico del sistema aeronáutico aprobado | 2027-05-26 | 2027-11-09 |
| Plan Maestro Aeroportuario actualizado y aprobado | 2027-05-26 | 2028-05-23 |
| Funcionarios capacitados en planificación, gestión y operación | 2028-03-02 | 2028-08-09 |
| Estrategia BIM aprobada | 2027-04-05 | 2027-08-04 |
| Personal de ingeniería capacitado en BIM | 2027-07-27 | 2027-10-25 |
| Estudio de conectividad terrestre entregado | 2027-05-26 | 2027-11-23 |
| Estudio de diversificación de destinos entregado | 2027-04-05 | 2027-09-23 |
| Auditoría para la certificación EDGE realizada | 2027-04-05 | 2029-06-06 |
| Personal capacitado en certificación EDGE | 2027-06-23 | 2029-06-01 |
| Estudio de separación de flujos entregado | 2027-04-05 | 2027-08-04 |
| Estudio de movilidad interna entregado | 2027-04-05 | 2027-08-25 |
| Programa de igualdad e inclusión ejecutado | 2027-04-05 | 2029-07-25 |
| Unidad ejecutora conformada y en funciones | 2026-04-16 | 2026-05-15 |
| Reglamento operativo vigente | 2026-06-01 | 2026-07-10 |
| Convenio de transferencia de recursos vigente | 2026-05-18 | 2026-07-03 |
| Cuenta especial aperturada | 2026-04-30 | 2026-06-03 |
| Plan de ejecución plurianual aprobado | 2026-04-23 | 2026-06-10 |
| Planes operativos anuales aprobados | 2026-11-02 | 2029-12-05 |
| Plan de adquisiciones aprobado | 2026-02-02 | 2029-07-25 |
| Sistema de gestión ambiental y social y plan de acción vigentes | 2026-05-11 | 2026-12-31 |
| Protocolo de seguridad operacional aprobado por la AAC | 2026-11-11 | 2027-03-11 |
| Mecanismo de quejas y reclamos en operación | 2026-07-20 | 2029-03-16 |
| Informes de cumplimiento socioambiental presentados | 2026-07-20 | 2029-07-26 |
| Contratos de obras del Componente I firmados | 2026-06-23 | 2027-07-22 |
| Contrato de supervisión firmado | 2026-05-06 | 2027-07-28 |
| Contratos de consultorías del Componente II firmados | 2026-11-02 | 2027-05-25 |
| Contratos de la unidad ejecutora, evaluación y auditoría firmados | 2026-02-02 | 2029-07-25 |
| Desembolsos justificados e informes financieros presentados | 2026-07-20 | 2029-08-22 |
| Auditorías externas emitidas | 2027-01-01 | 2029-03-16 |
| Evaluaciones de medio término y de cierre realizadas | 2027-11-01 | 2029-11-15 |
| Informe de terminación y cierre administrativo del programa | 2029-07-26 | 2030-04-01 |

## Version 2 (saved 2026-10-31)

Note of the change: Costear la curva S por actividad, rehacer la matriz por contrato y corregir el cronograma

Last finish stays 2030-04-01.

Changed:

| Task | Start | Finish |
| --- | --- | --- |
| Diseños de la terminal revisados y aprobados |  | 2026-09-28 → 2027-09-01 (+338d) |
| Puentes de abordaje, mobiliario y equipos instalados | 2027-08-20 → 2027-09-02 (+13d) |  |
| Plataforma de posiciones remotas construida | 2028-02-16 → 2028-02-25 (+9d) | 2028-08-22 → 2028-08-31 (+9d) |
| Señalización, luces y torres de iluminación de plataforma instaladas | 2028-07-11 → 2028-07-20 (+9d) |  |
| SSEI en funcionamiento en la nueva ubicación |  | 2028-02-15 → 2028-02-24 (+9d) |
| Estrategia BIM aprobada | 2027-04-05 → 2027-05-26 (+51d) | 2027-08-04 → 2027-09-24 (+51d) |
| Personal de ingeniería capacitado en BIM | 2027-07-27 → 2027-09-16 (+51d) | 2027-10-25 → 2027-12-15 (+51d) |
| Estudio de diversificación de destinos entregado | 2027-04-05 → 2027-04-21 (+16d) | 2027-09-23 → 2027-10-11 (+18d) |
| Auditoría para la certificación EDGE realizada | 2027-04-05 → 2027-04-21 (+16d) |  |
| Personal capacitado en certificación EDGE | 2027-06-23 → 2027-07-09 (+16d) |  |
| Estudio de separación de flujos entregado | 2027-04-05 → 2027-04-21 (+16d) | 2027-08-04 → 2027-08-20 (+16d) |
| Estudio de movilidad interna entregado | 2027-04-05 → 2027-04-21 (+16d) | 2027-08-25 → 2027-09-10 (+16d) |
| Programa de igualdad e inclusión ejecutado | 2027-04-05 → 2027-04-21 (+16d) | 2029-07-25 → 2029-08-10 (+16d) |
| Unidad ejecutora conformada y en funciones |  | 2026-05-15 → 2030-03-18 (+1403d) |
| Desembolsos justificados e informes financieros presentados |  | 2029-08-22 → 2029-09-07 (+16d) |
| Evaluaciones de medio término y de cierre realizadas | 2027-11-01 → 2027-06-11 (-143d) |  |
| Informe de terminación y cierre administrativo del programa | 2029-07-26 → 2029-08-13 (+18d) |  |
